# imcloud公有云第二阶段开发计划

How a schedule from MS Project changed from version to version. A marks actual dates.

## Version 1 (saved 2019-09-18, file imcloud公有云第二阶段开发计划v1.mpp)

Note of the change: project doc

| ID | WBS | Task | Duration | Start | Finish | Predecessors | Complete | Total float | Constraint |
| --- | --- | --- | --- | --- | --- | --- | --- | --- | --- |
| 1 | 1 | **需求编写** | 45d | 2019-07-15 A | 2019-09-16 A |  | 100% |  |  |
| 2 |  | 功能模块需求跟踪矩阵 | 5d | 2019-07-15 A | 2019-07-19 A |  | 100% |  |  |
| 3 |  | 设备通信接口 | 6d | 2019-07-22 A | 2019-07-29 A | 2 | 100% |  |  |
| 4 |  | Portal认证流程 | 5d | 2019-09-09 A | 2019-09-16 A |  | 100% |  |  |
| 5 | 2 | **云端服务** | 22d | 2019-09-09 A | 2019-10-14 |  | 23% | 0d |  |
| 6 | 2.1 | **3.设备管理** | 16d | 2019-09-09 A | 2019-09-30 |  | 43% |  |  |
| 7 |  | 3.1设备发现服务端 | 2d | 2019-09-11 A | 2019-09-12 A |  | 100% |  |  |
| 8 |  | 3.2设备上线服务端MQTT | 2d | 2019-09-16 A | 2019-09-17 |  | 80% |  |  |
| 9 |  | 3.3AP管理前端 | 6d | 2019-09-12 A | 2019-09-20 |  | 60% |  |  |
| 10 |  | 3.3AP管理服务端 | 7d | 2019-09-18 | 2019-09-26 | 12 |  |  |  |
| 11 |  | 3.4AC管理前端 | 3d | 2019-09-09 A | 2019-09-11 |  | 80% |  |  |
| 12 |  | 3.4AC管理服务端 | 4d | 2019-09-11 A | 2019-09-17 |  | 85% |  |  |
| 13 |  | 3.6DCME管理前端 | 3d | 2019-09-23 | 2019-09-25 | 9 |  |  |  |
| 14 |  | 3.6DCME管理服务端 | 3d | 2019-09-27 | 2019-09-30 | 10 |  |  |  |
| 15 | 2.2 | **4.网络配置** | 12d | 2019-09-11 A | 2019-09-27 |  | 26% |  |  |
| 16 |  | 4.1无线网络配置前端 | 4d | 2019-09-11 A | 2019-09-17 |  | 80% |  |  |
| 17 |  | 4.1无线网络配置服务端 | 5d | 2019-09-11 A | 2019-09-18 |  | 70% |  |  |
| 18 | 2.2.3 | **4.3认证配置** | 9d | 2019-09-17 | 2019-09-27 |  |  |  |  |
| 19 |  | 4.3.1认证策略设置前端 | 5d | 2019-09-18 | 2019-09-24 | 16 |  |  |  |
| 20 |  | 4.3.1认证策略设置服务端 | 4d | 2019-09-18 | 2019-09-23 |  |  |  |  |
| 21 |  | 4.3.4微信/短信设置前端 | 2d | 2019-09-25 | 2019-09-26 | 19 |  |  |  |
| 22 |  | 4.3.4微信/短信设置服务端 | 1d | 2019-09-24 | 2019-09-24 |  |  |  |  |
| 23 |  | 4.4Portal认证页面缓存到设备 | 5d | 2019-09-23 | 2019-09-27 |  |  |  |  |
| 24 | 2.3 | **5.用户Portal认证** | 18d | 2019-09-16 A | 2019-10-14 |  | 6% | 0d |  |
| 25 |  | 5.1账号认证5.2海报认证 （扫码认证）5.3短信认证5.4一键认证5.6微信公众号菜单认证5.7微信验证码认证5.9第三方Portal认证前端 | 9d | 2019-09-27 | 2019-10-14 | 21 |  |  |  |
| 26 |  | 5.1账号认证服务端 | 3d | 2019-09-16 A | 2019-09-18 |  | 50% |  |  |
| 27 |  | 5.2海报认证 （扫码认证）服务端 | 3d | 2019-09-19 | 2019-09-23 |  |  |  |  |
| 28 |  | 5.3短信认证服务端 | 3d | 2019-09-24 | 2019-09-26 |  |  |  |  |
| 29 |  | 5.4一键认证服务端 | 3d | 2019-09-27 | 2019-09-30 |  |  |  |  |
| 30 |  | 5.6微信公众号菜单认证服务端 | 2d | 2019-10-08 | 2019-10-09 |  |  |  |  |
| 31 |  | 5.7微信验证码认证服务端 | 2d | 2019-10-10 | 2019-10-11 |  |  |  |  |
| 32 |  | 5.9第三方Portal认证服务端 | 2d | 2019-10-12 | 2019-10-14 |  |  |  |  |
| 33 | 2.4 | **6.状态与监控** | 11d | 2019-09-18 | 2019-10-08 |  |  |  |  |
| 34 |  | 6.1网络设备概况前端 | 3d | 2019-09-26 | 2019-09-29 | 13 |  |  |  |
| 35 |  | 6.1网络设备概况服务端 | 2d | 2019-09-19 | 2019-09-20 | 17 |  |  |  |
| 36 |  | 6.3日志管理前端 | 3d | 2019-09-24 | 2019-09-26 |  |  |  |  |
| 37 |  | 6.3日志管理服务端 | 2d | 2019-09-30 | 2019-10-08 | 34 |  |  |  |
| 38 |  | 数据上报 下发和Portal框架移植 | 2d | 2019-09-16 A | 2019-09-17 A |  | 100% |  |  |
| 39 |  | 数据库设计 | 2d | 2019-09-10 A | 2019-09-11 |  | 85% |  |  |
| 40 |  | 数据上报下发 | 10d | 2019-09-25 | 2019-10-12 |  |  |  |  |
| 41 | 3 | **AC** | 20d? | 2019-09-09 A | 2019-10-12 |  | 12% | 0d |  |
| 42 | 3.1 | **二级AC开发** | 15d? | 2019-09-09 A | 2019-09-30 |  | 15% | 0d |  |
| 43 | 3.1.1 | **二级AC注册公有云** | 7d? | 2019-09-09 A | 2019-09-19 |  | 66% | 0d |  |
| 44 |  | 二级AC访问公有云url | 3d | 2019-09-09 A | 2019-09-12 A |  | 100% |  | start no earlier than 2019-09-09 |
| 45 |  | 二级AC接收并提取公有云回复的注册url | 2d? | 2019-09-12 A | 2019-09-17 | 44 | 80% | 0d |  |
| 46 |  | 二级AC解析注册url，建立MQTT连接 | 2d? | 2019-09-17 | 2019-09-19 | 45 |  | 0d |  |
| 47 | 3.1.2 | **二级AC首次配置下发** | 8d? | 2019-09-19 | 2019-09-30 | 43 |  | 0d |  |
| 48 |  | 二级AC首次连接清空配置 | 3d | 2019-09-19 | 2019-09-24 | 46 |  | 0d |  |
| 49 |  | 二级AC接收整体配置并解析生效 | 5d? | 2019-09-24 | 2019-09-30 | 48 |  | 0d |  |
| 50 | 3.1.3 | **二级AC接口调整** | 15d | 2019-09-09 | 2019-09-30 |  |  | 0d |  |
| 51 |  | 公共接口实现 | 10d | 2019-09-09 | 2019-09-24 |  |  | 0d | start no earlier than 2019-09-09 |
| 52 |  | 二级AC专有通信接口 | 5d | 2019-09-24 | 2019-09-30 | 51 |  | 0d |  |
| 53 | 3.2 | **二级AC自测** | 5d | 2019-09-30 | 2019-10-12 | 42 |  |  |  |
| 54 |  | 二级AC注册公有云自测 | 3d | 2019-09-30 | 2019-10-10 | 49 |  | 0d |  |
| 55 |  | 二级AC上线配置下发自测 | 2d | 2019-10-10 | 2019-10-12 | 54 |  | 0d |  |
| 56 |  | 二级AC接口自测 | 5d | 2019-09-30 | 2019-10-12 | 52 |  | 0d |  |
| 57 | 4 | **集成联调** | 11d | 2019-10-14 | 2019-10-28 |  |  |  |  |
| 58 | 4.1 | **二级AC联调** | 10d | 2019-10-15 | 2019-10-28 |  |  | 0d |  |
| 59 |  | 设备发现和上线联调 | 2d | 2019-10-15 | 2019-10-16 |  |  |  |  |
| 60 |  | 设备信息上报和配置下发联调 | 3d | 2019-10-17 | 2019-10-21 |  |  |  |  |
| 61 |  | 无线网络配置下发联调 | 2d | 2019-10-22 | 2019-10-23 |  |  |  |  |
| 62 |  | 认证策略下发联调 | 3d | 2019-10-24 | 2019-10-28 |  |  |  |  |
| 63 |  | Portal联调 | 6d | 2019-10-15 | 2019-10-22 |  |  |  |  |
| 64 | 4.2 | **DCME联调** | 9d | 2019-10-16 | 2019-10-28 |  |  | 0d |  |
| 65 |  | 设备发现和上线 | 2d | 2019-10-16 | 2019-10-17 |  |  |  |  |
| 66 |  | 上报和配置下发 | 7d | 2019-10-18 | 2019-10-28 |  |  |  |  |
| 67 |  | Portal联调 | 4d | 2019-10-23 | 2019-10-28 |  |  |  |  |
| 68 | 5 | **集成自测** | 9d | 2019-10-29 | 2019-11-08 | 57 |  |  |  |
| 69 | 5.1 | **自模块测试** | 5d | 2019-10-29 | 2019-11-04 |  |  | 0d |  |
| 70 |  | 日志管理和网络概述 | 5d | 2019-10-29 | 2019-11-04 |  |  |  |  |

| ID | WBS | Task | Duration | Start | Finish | Predecessors | Total float |
| --- | --- | --- | --- | --- | --- | --- | --- |
| 71 |  | 设备管理 | 5d | 2019-10-29 | 2019-11-04 |  |  |
| 72 |  | Portal认证 | 5d | 2019-10-29 | 2019-11-04 |  |  |
| 73 |  | 认证策略配置 | 5d | 2019-10-29 | 2019-11-04 |  |  |
| 74 |  | 无线网络配置 | 5d | 2019-10-29 | 2019-11-04 |  |  |
| 75 | 5.2 | **交叉测试** | 4d | 2019-11-05 | 2019-11-08 |  | 0d |
| 76 |  | 日志管理和网络概述 | 4d | 2019-11-05 | 2019-11-08 |  |  |
| 77 |  | 设备管理 | 4d | 2019-11-05 | 2019-11-08 |  |  |
| 78 |  | Portal认证 | 4d | 2019-11-05 | 2019-11-08 |  |  |
| 79 |  | 认证策略配置 | 4d | 2019-11-05 | 2019-11-08 |  |  |
| 80 |  | 无线网络配置 | 4d | 2019-11-05 | 2019-11-08 |  |  |
| 81 |  | 发布测试版本（tr4） | 1d? | 2019-11-11 | 2019-11-11 | 68 |  |
| 82 | 7 | **功能测试** | 15d | 2019-11-11 | 2019-11-29 |  |  |
| 83 |  | 设备管理 | 3d | 2019-11-11 | 2019-11-13 |  |  |
| 84 |  | 无线网络配置 | 2d | 2019-11-14 | 2019-11-15 | 83 |  |
| 85 |  | 认证策略配置 | 2d | 2019-11-18 | 2019-11-19 | 84 |  |
| 86 |  | Portal认证 | 6d | 2019-11-20 | 2019-11-27 | 85 |  |
| 87 |  | 状态与监控 | 2d | 2019-11-28 | 2019-11-29 | 86 |  |
| 88 | 8 | **集成测试** | 16d | 2019-12-02 | 2019-12-23 |  | 0d |
| 89 |  | 第一轮集成测试 | 5d | 2019-12-02 | 2019-12-06 |  |  |
| 90 |  | 第二轮集成测试 | 5d | 2019-12-17 | 2019-12-23 | 91 |  |
| 91 |  | 性能测试 | 6d | 2019-12-09 | 2019-12-16 | 89 |  |
| 92 |  | 确认测试 | 3d | 2019-12-24 | 2019-12-26 | 90 |  |
| 93 |  | 产品发布 | 1d | 2019-12-27 | 2019-12-27 | 92 |  |

## Version 2 (saved 2019-09-23, file imcloud公有云第二阶段开发计划v1.mpp)

Note of the change: 添加DCME开发计划

Last finish stays 2019-12-27.

Added:

| ID | Task | Duration | Start | Finish | Resources |
| --- | --- | --- | --- | --- | --- |
| 57 | **DCME** | 57d | 2019-08-05 | 2019-10-28 |  |
| 58 | **开发** | 48d | 2019-08-05 | 2019-10-15 |  |
| 59 | mqtt、json、xml、设备配置、信息熟悉等先期工作 | 23d | 2019-08-05 | 2019-09-04 | 周凡 |
| 60 | 代码基础结构，包含多线程、mqtt数据发送接收等 | 6d | 2019-09-05 | 2019-09-12 | 张璧 |
| 61 | 时钟同步、设备重新发现，定时更新 | 6d | 2019-09-05 | 2019-09-12 | 周凡 |
| 62 | 配置文件同步，无线网络配置下发 | 5d | 2019-09-16 | 2019-09-20 | 周凡 |
| 63 | 设备发现，心跳，认证 | 7d | 2019-09-16 | 2019-09-24 | 张璧 |
| 64 | DCME上线、定时上报、ap定时上报、shell命令执行等 | 7d | 2019-09-23 | 2019-09-30 | 周凡 |
| 65 | 自测所有功能点 | 7d | 2019-10-08 | 2019-10-15 | 周凡 |
| 66 | **联调** | 9d | 2019-10-16 | 2019-10-28 |  |
| 67 | 设备发现和上线 | 2d | 2019-10-16 | 2019-10-17 | 周凡 |
| 68 | 上报和配置下发 | 4d | 2019-10-18 | 2019-10-23 | 周凡 |
| 69 | portal联调 | 3d | 2019-10-24 | 2019-10-28 | 周凡 |
| 70 | 张璧协同配合周凡 | 9d | 2019-10-16 | 2019-10-28 | 张璧 [30%] |

## Version 3 (saved 2019-09-26, file imcloud公有云第二阶段开发计划v1.mpp)

Note of the change: 进度更新

Last finish stays 2019-12-27. Complete tasks 6 → 9.

Added:

| ID | Task | Duration | Start | Finish |
| --- | --- | --- | --- | --- |
| 1 | **Imcloud公有云** | 116d? | 2019-07-15 A | 2019-12-27 |

Changed:

| ID | Task | Start | Finish | Complete | Total float | Other |
| --- | --- | --- | --- | --- | --- | --- |
| 6 | **云端服务** |  |  | 23% → 60% |  |  |
| 7 | **3.设备管理** |  |  | 43% → 80% |  |  |
| 10 | 3.3AP管理前端 |  |  | 60% → 90% |  |  |
| 11 | 3.3AP管理服务端 | 2019-09-18 A |  | 0% → 80% |  |  |
| 12 | 3.4AC管理前端 |  |  | 80% → 90% |  |  |
| 14 | 3.6DCME管理前端 | 2019-09-23 A |  | 0% → 80% |  |  |
| 15 | 3.6DCME管理服务端 | 2019-09-27 A |  | 0% → 30% |  |  |
| 16 | **4.网络配置** |  |  | 26% → 70% |  |  |
| 17 | 4.1无线网络配置前端 |  |  | 80% → 95% |  |  |
| 18 | 4.1无线网络配置服务端 |  |  | 70% → 80% |  |  |
| 19 | **4.3认证配置** |  |  | 0% → 88% |  |  |
| 20 | 4.3.1认证策略设置前端 | 2019-09-18 A |  | 0% → 90% |  |  |
| 21 | 4.3.1认证策略设置服务端 | 2019-09-18 A |  | 0% → 80% |  |  |
| 22 | 4.3.4微信/短信设置前端 | 2019-09-25 A |  | 0% → 90% |  |  |
| 23 | 4.3.4微信/短信设置服务端 | 2019-09-24 A | 2019-09-24 A | 0% → 100% |  |  |
| 25 | **5.用户Portal认证** |  |  | 6% → 30% |  |  |
| 27 | 5.1账号认证服务端 |  |  | 50% → 90% |  |  |
| 29 | 5.3短信认证服务端 | 2019-09-24 A |  | 0% → 90% |  |  |
| 30 | 5.4一键认证服务端 | 2019-09-27 A |  | 0% → 90% |  |  |
| 34 | **6.状态与监控** |  |  | 0% → 97% |  |  |
| 35 | 6.1网络设备概况前端 | 2019-09-26 A | 2019-09-29 A | 0% → 100% |  |  |
| 36 | 6.1网络设备概况服务端 | 2019-09-19 A | 2019-09-20 A | 0% → 100% |  |  |
| 37 | 6.3日志管理前端 | 2019-09-24 A |  | 0% → 90% |  | resources 孙杨寸 → 习云芳 |
| 38 | 6.3日志管理服务端 | 2019-09-30 A | 2019-10-08 A | 0% → 100% |  |  |
| 42 | **AC** |  |  | 12% → 34% |  |  |
| 43 | **二级AC开发** |  |  | 15% → 45% |  |  |
| 44 | **二级AC注册公有云** |  |  | 66% → 90% |  |  |
| 45 | 二级AC访问公有云url |  | 2019-09-12 A → 2019-09-12 | 100% → 90% | none → 1.8d |  |
| 46 | 二级AC接收并提取公有云回复的注册url |  |  | 80% → 90% | 0d → 1.8d |  |
| 47 | 二级AC解析注册url，建立MQTT连接 | 2019-09-17 A |  | 0% → 90% |  |  |
| 48 | **二级AC首次配置下发** | 2019-09-19 A |  | 0% → 4% |  |  |
| 49 | 二级AC首次连接清空配置 | 2019-09-19 A |  | 0% → 10% |  |  |
| 51 | **二级AC接口调整** | 2019-09-09 A |  | 0% → 47% |  |  |
| 52 | 公共接口实现 | 2019-09-09 A |  | 0% → 70% |  |  |
| 58 | **DCME** | 2019-08-05 A |  | 0% → 20% |  |  |
| 59 | **开发** | 2019-08-05 A |  | 0% → 26% |  |  |
| 61 | 代码基础结构，包含多线程、mqtt数据发送接收等 | 2019-09-05 A |  | 0% → 85% |  |  |
| 62 | 时钟同步、设备重新发现，定时更新 | 2019-09-05 A |  | 0% → 85% |  |  |
| 64 | 设备发现，心跳，认证 | 2019-09-16 A |  | 0% → 85% |  |  |

## Version 4 (saved 2019-09-27, file imcloud公有云测试计划_开发请看公有云第二阶段开发计划v1.mpp)

Note of the change: 更新计划

Last finish 2019-12-27 → 2020-01-08 (+12d). Complete tasks 9 → 6.

Added:

| ID | Task | Duration | Start | Finish | Predecessors | Constraint | Resources |
| --- | --- | --- | --- | --- | --- | --- | --- |
| 96 | **测试准备工作** | 47.5d? | 2019-09-29 | 2019-12-09 | 23 |  |  |
| 97 | 测试计划和测试策略撰写 | 5d | 2019-09-29 | 2019-10-10 |  |  | 严文会 |
| 98 | **功能测试方案撰写和评审** | 20.5d? | 2019-09-30 | 2019-11-01 | 97 |  |  |
| 99 | **设备管理** | 13.5d? | 2019-09-30 | 2019-10-23 |  |  |  |
| 100 | **设备管理前端** | 6d | 2019-09-30 | 2019-10-12 |  |  |  |
| 101 | AP管理前端 | 1d | 2019-09-30 | 2019-09-30 |  |  | 刘江珊 |
| 102 | AP管理注册、上线、上报 | 1d | 2019-10-08 | 2019-10-08 | 101 |  | 刘江珊 |
| 103 | AC管理前端 | 1d | 2019-10-09 | 2019-10-09 | 102 |  | 刘江珊 |
| 104 | AC管理注册、上线、上报 | 1d | 2019-10-10 | 2019-10-10 | 103 |  | 刘江珊 |
| 105 | DCME管理前端 | 1d | 2019-10-11 | 2019-10-11 | 104 |  | 刘江珊 |
| 106 | DCME注册、上线、上报 | 1d | 2019-10-12 | 2019-10-12 | 105 |  | 刘江珊 |
| 107 | **二级AC** | 2d | 2019-10-14 | 2019-10-15 |  |  |  |
| 108 | 二级AC注册公有云 | 2d | 2019-10-14 | 2019-10-15 | 106 |  | 刘江珊 |
| 109 | **DCME** | 1d? | 2019-10-10 | 2019-10-11 |  |  |  |
| 110 | 时钟同步、设备重新发现，定时更新 | 1.5d | 2019-10-16 | 2019-10-17 | 108 |  | 刘江珊 |
| 111 | DCME上线、定时上报、ap定时上报、shell命令执行等 | 2d | 2019-10-17 | 2019-10-21 | 110 |  | 刘江珊 |
| 112 | AP、AC、DCME兼容性 | 2d | 2019-10-21 | 2019-10-23 | 111 |  | 刘江珊 |
| 113 | **网络配置** | 6d? | 2019-09-30 | 2019-10-12 |  |  |  |
| 114 | 无线网络配置前端 | 1.5d | 2019-09-30 | 2019-10-08 |  |  | 陈晶 |
| 115 | 二级AC网络配置下发、同步 | 1d | 2019-10-08 | 2019-10-09 | 114 |  | 陈晶 |
| 116 | DCME无线网络配置下发、同步 | 1d | 2019-10-09 | 2019-10-10 | 115 |  | 陈晶 |
| 117 | AP无线网络配置下发、同步 | 0.5d | 2019-10-10 | 2019-10-10 | 116 |  | 陈晶 |
| 118 | 认证配置 | 1.5d | 2019-10-11 | 2019-10-12 | 117 |  | 陈晶 |
| 119 | **portal认证** | 12d? | 2019-10-12 | 2019-10-28 |  |  |  |
| 120 | 账号认证 | 1d | 2019-10-12 | 2019-10-14 | 118 |  | 陈晶 |
| 121 | 海报认证 （扫码认证） | 1d | 2019-10-14 | 2019-10-15 | 120 |  | 陈晶 |
| 122 | 短信认证 | 1d | 2019-10-15 | 2019-10-16 | 121 |  | 陈晶 |
| 123 | 一键认证 | 1d | 2019-10-16 | 2019-10-17 | 122 |  | 陈晶 |
| 124 | 微信公众号菜单认证 | 1d | 2019-10-17 | 2019-10-18 | 123 |  | 陈晶 |
| 125 | 微信验证码认证 | 1d | 2019-10-18 | 2019-10-21 | 124 |  | 陈晶 |
| 126 | 第三方Portal认证 | 1d | 2019-10-21 | 2019-10-22 | 125 |  | 陈晶 |
| 127 | 终端下线、无感知认证 | 1d | 2019-10-22 | 2019-10-23 | 126 |  | 陈晶 |
| 128 | Portal认证页面缓存到设备 | 1d | 2019-10-23 | 2019-10-24 | 127 |  | 陈晶 |
| 129 | AP、AC、DCME兼容性 | 1d | 2019-10-24 | 2019-10-25 | 128 |  | 陈晶 |
| 130 | 终端兼容性 | 1d | 2019-10-25 | 2019-10-28 | 129 |  | 陈晶 |
| 132 | 日志管理 | 1.5d | 2019-10-29 | 2019-10-30 | 131 |  | 付培胜 [50%] |
| 133 | 告警通知 | 1d | 2019-10-30 | 2019-10-31 | 132 |  | 付培胜 [50%] |
| 134 | 软件国际化 | 1d | 2019-10-31 | 2019-11-01 | 133 |  | 付培胜 [50%] |
| 135 | 准入测试方案 | 1d | 2019-11-04 | 2019-11-04 |  | start no earlier than 2019-11-04 | 刘江珊 |
| 136 | 集成测试方案撰写和评审 | 5d | 2019-12-02 | 2019-12-09 | 134, 165, 203 |  | 付培胜 |
| 137 | 性能测试方案撰写和测试手段调研 | 3d | 2019-09-29 | 2019-10-08 |  |  | 黄淼森 |
| 138 | 测试环境搭建和相关测试设备的准备 | 3d | 2019-10-11 | 2019-10-15 | 137 | start no earlier than 2019-10-11 | 严文会 |
| 139 | 接口功能录制和预测试（后期利用jemeter进行接口回归） | 8d | 2019-10-16 | 2019-10-25 | 138 |  | 黄淼森 |
| 141 | **第一轮功能测试** | 14d | 2019-11-12 | 2019-11-29 |  |  |  |
| 142 | 账号注册登录和权限管理模块（涵盖账号管理/企业站点管理/管理员/用户管理） | 4d | 2019-11-12 | 2019-11-15 | 95 |  | 黄淼森 |
| 143 | 账号注册登录和权限管理模块（涵盖账号管理/企业站点管理/管理员/用户管理） | 2d | 2019-11-18 | 2019-11-19 | 142 |  | 黄淼森 |
| 144 | 账号注册登录和权限管理模块Bug回归和测试报告撰写 | 2d | 2019-11-20 | 2019-11-21 | 143 |  | 黄淼森 |
| 145 | **设备管理** | 8d? | 2019-11-12 | 2019-11-21 |  |  |  |
| 146 | **设备管理前端** | 5d? | 2019-11-12 | 2019-11-18 |  |  |  |
| 147 | AP管理前端 | 0.5d | 2019-11-12 | 2019-11-12 | 95 |  | 刘江珊 |
| 148 | AP管理注册、上线、上报 | 1d | 2019-11-12 | 2019-11-13 | 147 |  | 刘江珊 |
| 149 | AC管理前端 | 0.5d | 2019-11-13 | 2019-11-13 | 148 |  | 刘江珊 |
| 150 | AC管理注册、上线、上报 | 1d | 2019-11-14 | 2019-11-14 | 149 |  | 刘江珊 |
| 151 | DCME管理前端 | 0.5d | 2019-11-15 | 2019-11-15 | 150 |  | 刘江珊 |
| 152 | DCME注册、上线、上报 | 1d | 2019-11-15 | 2019-11-18 | 151 |  | 刘江珊 |
| 153 | **二级AC** | 2d? | 2019-11-12 | 2019-11-13 |  |  |  |
| 154 | 二级AC注册公有云 | 1d | 2019-11-18 | 2019-11-19 | 152 |  | 刘江珊 |
| 155 | **DCME** | 2d? | 2019-11-19 | 2019-11-20 |  |  |  |
| 156 | 时钟同步、设备重新发现，定时更新 | 0.5d | 2019-11-19 | 2019-11-19 | 154 |  | 刘江珊 |
| 157 | DCME上线、定时上报、ap定时上报、shell命令执行等 | 1d | 2019-11-20 | 2019-11-20 | 156 |  | 刘江珊 |
| 158 | AP、AC、DCME兼容性 | 1d | 2019-11-21 | 2019-11-21 | 157 |  | 刘江珊 |
| 159 | **网络配置** | 4d? | 2019-11-22 | 2019-11-27 |  |  |  |
| 160 | 无线网络配置前端 | 0.5d | 2019-11-22 | 2019-11-22 | 158 |  | 刘江珊 |
| 161 | 二级AC网络配置下发、同步 | 0.5d | 2019-11-22 | 2019-11-22 | 160 |  | 刘江珊 |
| 162 | DCME无线网络配置下发、同步 | 0.5d | 2019-11-25 | 2019-11-25 | 161 |  | 刘江珊 |
| 163 | AP无线网络配置下发、同步 | 0.5d | 2019-11-25 | 2019-11-25 | 162 |  | 刘江珊 |
| 164 | 认证配置 | 1d | 2019-11-26 | 2019-11-26 | 163 |  | 刘江珊 |
| 165 | 软件国际化 | 1d | 2019-11-27 | 2019-11-27 | 164 |  | 刘江珊 |
| 166 | **portal认证** | 10d? | 2019-11-12 | 2019-11-25 |  |  |  |
| 167 | 账号认证 | 1d | 2019-11-12 | 2019-11-12 | 95 |  | 陈晶 |
| 168 | 海报认证 （扫码认证） | 1d | 2019-11-13 | 2019-11-13 | 167 |  | 陈晶 |
| 169 | 短信认证 | 0.5d | 2019-11-14 | 2019-11-14 | 168 |  | 陈晶 |
| 170 | 一键认证 | 0.5d | 2019-11-14 | 2019-11-14 | 169 |  | 陈晶 |
| 171 | 微信公众号菜单认证 | 1d | 2019-11-15 | 2019-11-15 | 170 |  | 陈晶 |
| 172 | 微信验证码认证 | 1d | 2019-11-18 | 2019-11-18 | 171 |  | 陈晶 |
| 173 | 第三方Portal认证 | 1d | 2019-11-19 | 2019-11-19 | 172 |  | 陈晶 |
| 174 | 终端下线、无感知认证 | 1.5d | 2019-11-20 | 2019-11-21 | 173 |  | 陈晶 |
| 175 | Portal认证页面缓存到设备 | 0.5d | 2019-11-21 | 2019-11-21 | 174 |  | 陈晶 |
| 176 | AP、AC、DCME兼容性 | 1d | 2019-11-22 | 2019-11-22 | 175 |  | 陈晶 |
| 177 | 终端兼容性 | 1d | 2019-11-25 | 2019-11-25 | 176 |  | 陈晶 |
| 178 | 状态与监控 | 0.5d? | 2019-11-26 | 2019-11-26 | 177 |  | 陈晶 |
| 179 | 日志管理 | 1d | 2019-11-26 | 2019-11-27 | 178 |  | 陈晶 |
| 180 | 告警通知 | 0.5d | 2019-11-27 | 2019-11-27 | 179 |  | 陈晶 |
| 181 | bug检验和版本发布 | 2d | 2019-11-28 | 2019-11-29 | 180 |  | 刘江珊; 陈晶 |
| 182 | **第二轮功能测试** | 12d | 2019-12-02 | 2019-12-17 |  |  |  |
| 183 | **设备管理** | 7d? | 2019-12-02 | 2019-12-10 |  |  |  |
| 184 | **设备管理前端** | 3d? | 2019-12-02 | 2019-12-04 |  |  |  |
| 185 | AP管理前端 | 0.5d | 2019-12-02 | 2019-12-02 | 181 |  | 陈晶 |
| 186 | AP管理注册、上线、上报 | 0.5d | 2019-12-02 | 2019-12-02 | 185 |  | 陈晶 |
| 187 | AC管理前端 | 0.5d | 2019-12-03 | 2019-12-03 | 186 |  | 陈晶 |
| 188 | AC管理注册、上线、上报 | 0.5d | 2019-12-03 | 2019-12-03 | 187 |  | 陈晶 |
| 189 | DCME管理前端 | 0.5d | 2019-12-04 | 2019-12-04 | 188 |  | 陈晶 |
| 190 | DCME注册、上线、上报 | 0.5d | 2019-12-04 | 2019-12-04 | 189 |  | 陈晶 |
| 191 | **二级AC** | 2d? | 2019-12-02 | 2019-12-03 |  |  |  |
| 192 | 二级AC注册公有云 | 1d | 2019-12-05 | 2019-12-05 | 190 |  | 陈晶 |
| 193 | **DCME** | 2d? | 2019-12-06 | 2019-12-09 |  |  |  |
| 194 | 时钟同步、设备重新发现，定时更新 | 0.5d | 2019-12-06 | 2019-12-06 | 192 |  | 陈晶 |
| 195 | DCME上线、定时上报、ap定时上报、shell命令执行等 | 1d | 2019-12-06 | 2019-12-09 | 194 |  | 陈晶 |
| 196 | AP、AC、DCME兼容性 | 1d | 2019-12-09 | 2019-12-10 | 195 |  | 陈晶 |
| 197 | **网络配置** | 4d? | 2019-12-10 | 2019-12-13 |  |  |  |
| 198 | 无线网络配置前端 | 0.5d | 2019-12-10 | 2019-12-10 | 196 |  | 陈晶 |
| 199 | 二级AC网络配置下发、同步 | 0.5d | 2019-12-11 | 2019-12-11 | 198 |  | 陈晶 |
| 200 | DCME无线网络配置下发、同步 | 0.5d | 2019-12-11 | 2019-12-11 | 199 |  | 陈晶 |
| 201 | AP无线网络配置下发、同步 | 0.5d | 2019-12-12 | 2019-12-12 | 200 |  | 陈晶 |
| 202 | 认证配置 | 1d | 2019-12-12 | 2019-12-13 | 201 |  | 陈晶 |
| 203 | 软件国际化 | 0.5d | 2019-12-02 | 2019-12-02 | 181 |  | 刘江珊 |
| 204 | **portal认证** | 7d | 2019-12-04 | 2019-12-12 |  |  |  |
| 205 | 账号认证 | 1d | 2019-12-02 | 2019-12-03 | 203 |  | 刘江珊 |
| 206 | 海报认证 （扫码认证） | 0.5d | 2019-12-03 | 2019-12-03 | 205 |  | 刘江珊 |
| 207 | 短信认证 | 0.5d | 2019-12-04 | 2019-12-04 | 206 |  | 刘江珊 |
| 208 | 一键认证 | 0.5d | 2019-12-04 | 2019-12-04 | 207 |  | 刘江珊 |
| 209 | 微信公众号菜单认证 | 0.5d | 2019-12-05 | 2019-12-05 | 208 |  | 刘江珊 |
| 210 | 微信验证码认证 | 0.5d | 2019-12-05 | 2019-12-05 | 209 |  | 刘江珊 |
| 211 | 第三方Portal认证 | 1d | 2019-12-06 | 2019-12-06 | 210 |  | 刘江珊 |
| 212 | 终端下线、无感知认证 | 1d | 2019-12-09 | 2019-12-09 | 211 |  | 刘江珊 |
| 213 | Portal认证页面缓存到设备 | 0.5d | 2019-12-10 | 2019-12-10 | 212 |  | 刘江珊 |
| 214 | AP、AC、DCME兼容性 | 1d | 2019-12-10 | 2019-12-11 | 213 |  | 刘江珊 |
| 215 | 终端兼容性 | 1d | 2019-12-11 | 2019-12-12 | 214 |  | 刘江珊 |
| 216 | 状态与监控 | 0.5d? | 2019-12-12 | 2019-12-12 | 215 |  | 刘江珊 |
| 217 | 日志管理 | 0.5d | 2019-12-13 | 2019-12-13 | 216 |  | 刘江珊 |
| 218 | bug回归和版本发布 | 2d | 2019-12-13 | 2019-12-17 | 217 |  | 刘江珊; 陈晶 |
| 219 | **性能测试** | 10d | 2019-11-28 | 2019-12-11 |  |  |  |
| 220 | 性能测试第一轮 | 6d | 2019-11-28 | 2019-12-05 | 144 |  | 黄淼森 |
| 221 | 性能测试第二轮 | 3d | 2019-12-06 | 2019-12-10 | 220 |  | 黄淼森 |
| 222 | 性能测试回归和测试报告撰写 | 1d | 2019-12-11 | 2019-12-11 | 221 |  | 黄淼森 |
| 226 | 集成测试bug回归和报告撰写 | 1d | 2019-12-31 | 2020-01-01 | 225 |  |  |
| 227 | **确认测试** | 5d | 2020-01-01 | 2020-01-08 |  |  |  |
| 228 | 确认测试第一轮功能测试 | 2d | 2020-01-01 | 2020-01-03 | 226 |  | 陈晶; 刘江珊 |
| 229 | 确认测试bug回归和报告撰写 | 1d | 2020-01-03 | 2020-01-06 | 228 |  | 陈晶; 刘江珊 |
| 230 | 确认测试第二轮功能测试 | 2d | 2020-01-06 | 2020-01-08 | 229 |  | 陈晶; 刘江珊 |

Removed: 1 Imcloud公有云; 98 设备管理; 99 无线网络配置; 100 认证策略配置; 101 Portal认证; 106 性能测试; 107 确认测试; 108 产品发布

Changed:

| ID | Task | Start | Finish | Duration | Complete | Total float | Predecessors | Other |
| --- | --- | --- | --- | --- | --- | --- | --- | --- |
| 5 | **云端服务** |  |  |  | 60% → 23% |  |  |  |
| 6 | **3.设备管理** |  |  |  | 80% → 43% |  |  |  |
| 9 | 3.3AP管理前端 |  |  |  | 90% → 60% |  |  |  |
| 10 | 3.3AP管理服务端 | 2019-09-18 A → 2019-09-18 |  |  | 80% → 0% |  |  |  |
| 11 | 3.4AC管理前端 |  |  |  | 90% → 80% |  |  |  |
| 13 | 3.6DCME管理前端 | 2019-09-23 A → 2019-09-23 |  |  | 80% → 0% |  |  |  |
| 14 | 3.6DCME管理服务端 | 2019-09-27 A → 2019-09-27 |  |  | 30% → 0% |  |  |  |
| 15 | **4.网络配置** |  |  |  | 70% → 26% |  |  |  |
| 16 | 4.1无线网络配置前端 |  |  |  | 95% → 80% |  |  |  |
| 17 | 4.1无线网络配置服务端 |  |  |  | 80% → 70% |  |  |  |
| 18 | **4.3认证配置** |  |  |  | 88% → 0% |  |  |  |
| 19 | 4.3.1认证策略设置前端 | 2019-09-18 A → 2019-09-18 |  |  | 90% → 0% |  |  |  |
| 20 | 4.3.1认证策略设置服务端 | 2019-09-18 A → 2019-09-18 |  |  | 80% → 0% |  |  |  |
| 21 | 4.3.4微信/短信设置前端 | 2019-09-25 A → 2019-09-25 |  |  | 90% → 0% |  |  |  |
| 22 | 4.3.4微信/短信设置服务端 | 2019-09-24 A → 2019-09-24 | 2019-09-24 A → 2019-09-24 |  | 100% → 0% |  |  |  |
| 24 | **5.用户Portal认证** |  |  |  | 30% → 6% |  |  |  |
| 26 | 5.1账号认证服务端 |  |  |  | 90% → 50% |  |  |  |
| 28 | 5.3短信认证服务端 | 2019-09-24 A → 2019-09-24 |  |  | 90% → 0% |  |  |  |
| 29 | 5.4一键认证服务端 | 2019-09-27 A → 2019-09-27 |  |  | 90% → 0% |  |  |  |
| 33 | **6.状态与监控** |  |  |  | 97% → 0% |  |  |  |
| 34 | 6.1网络设备概况前端 | 2019-09-26 A → 2019-09-26 | 2019-09-29 A → 2019-09-29 |  | 100% → 0% |  | 13 → 13, 105, 151, 189 |  |
| 35 | 6.1网络设备概况服务端 | 2019-09-19 A → 2019-09-19 | 2019-09-20 A → 2019-09-20 |  | 100% → 0% |  |  |  |
| 36 | 6.3日志管理前端 | 2019-09-24 A → 2019-09-24 |  |  | 90% → 0% |  |  | resources 习云芳 → 孙杨寸 |
| 37 | 6.3日志管理服务端 | 2019-09-30 A → 2019-09-30 | 2019-10-08 A → 2019-10-08 |  | 100% → 0% |  |  |  |
| 41 | **AC** |  |  |  | 34% → 12% |  |  |  |
| 42 | **二级AC开发** |  |  |  | 45% → 15% |  |  |  |
| 43 | **二级AC注册公有云** |  |  |  | 90% → 66% |  |  |  |
| 44 | 二级AC访问公有云url |  | 2019-09-12 A |  | 90% → 100% | 1.8d → none |  |  |
| 45 | 二级AC接收并提取公有云回复的注册url |  |  |  | 90% → 80% | 1.8d → 0d |  |  |
| 46 | 二级AC解析注册url，建立MQTT连接 | 2019-09-17 A → 2019-09-17 |  |  | 90% → 0% |  |  |  |
| 47 | **二级AC首次配置下发** | 2019-09-19 A → 2019-09-19 |  |  | 4% → 0% |  |  |  |
| 48 | 二级AC首次连接清空配置 | 2019-09-19 A → 2019-09-19 |  |  | 10% → 0% |  |  |  |
| 50 | **二级AC接口调整** | 2019-09-09 A → 2019-09-09 |  |  | 47% → 0% |  |  |  |
| 51 | 公共接口实现 | 2019-09-09 A → 2019-09-09 |  |  | 70% → 0% |  |  |  |
| 57 | **DCME** | 2019-08-05 A → 2019-08-05 |  |  | 20% → 0% |  |  |  |
| 58 | **开发** | 2019-08-05 A → 2019-08-05 |  |  | 26% → 0% |  |  |  |
| 60 | 代码基础结构，包含多线程、mqtt数据发送接收等 | 2019-09-05 A → 2019-09-05 |  |  | 85% → 0% |  |  |  |
| 61 | 时钟同步、设备重新发现，定时更新 | 2019-09-05 A → 2019-09-05 |  |  | 85% → 0% |  |  |  |
| 63 | 设备发现，心跳，认证 | 2019-09-16 A → 2019-09-16 |  |  | 85% → 0% |  |  |  |
| 131 | 状态与监控 | 2019-11-28 → 2019-10-28 (-31d) | 2019-11-29 → 2019-10-28 (-32d) | 2d → 1d |  | none → 44d | Portal认证 → none | constraint none → start no earlier than 2019-10-28; resources 邓皓 → 付培胜 [50%] |
| 140 | **功能测试** | 2019-11-11 → 2019-11-12 (+1d) | 2019-11-29 → 2019-12-17 (+18d) | 15d → 26d |  | none → 0d |  |  |
| 223 | **集成测试** | 2019-12-02 → 2019-12-17 (+15d) | 2019-12-23 → 2020-01-01 (+9d) | 16d → 11d |  |  |  | resources none → 所有 |
| 224 | 第一轮集成测试 | 2019-12-02 → 2019-12-17 (+15d) | 2019-12-06 → 2019-12-24 (+18d) |  |  | none → 0d | none → 218 | resources 邓皓 → none |
| 225 | 第二轮集成测试 | 2019-12-17 → 2019-12-24 (+7d) | 2019-12-23 → 2019-12-31 (+8d) |  |  | none → 0d | 性能测试 → 224 | resources 邓皓 → none |

## Version 5 (saved 2019-10-11, file imcloud公有云第二阶段开发计划v1.mpp)

Note of the change: 更新项目进展：需要联调的任务处于完成度百分之80-90

Last finish 2020-01-08 → 2019-12-27 (-12d). Complete tasks 6 → 10.

Added:

| ID | Task | Duration | Start | Finish | Predecessors | Resources |
| --- | --- | --- | --- | --- | --- | --- |
| 1 | **Imcloud公有云** | 116d? | 2019-07-15 A | 2019-12-27 |  |  |
| 39 | **统计分析** | 2d | 2019-10-09 A | 2019-10-10 |  |  |
| 40 | 在线用户列表服务端 | 2d | 2019-10-09 A | 2019-10-10 |  | 孙杨寸 |
| 41 | 在线用户列表前端 | 1d | 2019-10-09 | 2019-10-09 |  | 习云芳 |
| 42 | **服务框架** | 1d | 2019-10-14 | 2019-10-14 |  |  |
| 43 | 任务下发列表服务端 | 1d | 2019-10-14 | 2019-10-14 |  | 孙杨寸 |
| 44 | 任务下发列表前端 | 1d | 2019-10-14 | 2019-10-14 |  | 习云芳 |
| 104 | 设备管理 | 3d | 2019-11-11 | 2019-11-13 |  | 邓皓 |
| 105 | 无线网络配置 | 2d | 2019-11-14 | 2019-11-15 | 104 | 邓皓 |
| 106 | 认证策略配置 | 2d | 2019-11-18 | 2019-11-19 | 105 | 邓皓 |
| 107 | Portal认证 | 6d | 2019-11-20 | 2019-11-27 | 106 | 邓皓 |
| 112 | 性能测试 | 6d | 2019-12-09 | 2019-12-16 | 110 | 邓皓 |
| 113 | 确认测试 | 3d | 2019-12-24 | 2019-12-26 | 111 | 邓皓 |
| 114 | 产品发布 | 1d | 2019-12-27 | 2019-12-27 | 113 | 邓皓 |

Removed: 96 测试准备工作; 97 测试计划和测试策略撰写; 98 功能测试方案撰写和评审; 99 设备管理; 100 设备管理前端; 101 AP管理前端; 102 AP管理注册、上线、上报; 103 AC管理前端; 104 AC管理注册、上线、上报; 105 DCME管理前端; 106 DCME注册、上线、上报; 107 二级AC; 108 二级AC注册公有云; 109 DCME; 110 时钟同步、设备重新发现，定时更新; 111 DCME上线、定时上报、ap定时上报、shell命令执行等; 112 AP、AC、DCME兼容性; 113 网络配置; 114 无线网络配置前端; 115 二级AC网络配置下发、同步; 116 DCME无线网络配置下发、同步; 117 AP无线网络配置下发、同步; 118 认证配置; 119 portal认证; 120 账号认证; 121 海报认证 （扫码认证）; 122 短信认证; 123 一键认证; 124 微信公众号菜单认证; 125 微信验证码认证; 126 第三方Portal认证; 127 终端下线、无感知认证; 128 Portal认证页面缓存到设备; 129 AP、AC、DCME兼容性; 130 终端兼容性; 132 日志管理; 133 告警通知; 134 软件国际化; 135 准入测试方案; 136 集成测试方案撰写和评审; 137 性能测试方案撰写和测试手段调研; 138 测试环境搭建和相关测试设备的准备; 139 接口功能录制和预测试（后期利用jemeter进行接口回归）; 141 第一轮功能测试; 142 账号注册登录和权限管理模块（涵盖账号管理/企业站点管理/管理员/用户管理）; 143 账号注册登录和权限管理模块（涵盖账号管理/企业站点管理/管理员/用户管理）; 144 账号注册登录和权限管理模块Bug回归和测试报告撰写; 145 设备管理; 146 设备管理前端; 147 AP管理前端; 148 AP管理注册、上线、上报; 149 AC管理前端; 150 AC管理注册、上线、上报; 151 DCME管理前端; 152 DCME注册、上线、上报; 153 二级AC; 154 二级AC注册公有云; 155 DCME; 156 时钟同步、设备重新发现，定时更新; 157 DCME上线、定时上报、ap定时上报、shell命令执行等; 158 AP、AC、DCME兼容性; 159 网络配置; 160 无线网络配置前端; 161 二级AC网络配置下发、同步; 162 DCME无线网络配置下发、同步; 163 AP无线网络配置下发、同步; 164 认证配置; 165 软件国际化; 166 portal认证; 167 账号认证; 168 海报认证 （扫码认证）; 169 短信认证; 170 一键认证; 171 微信公众号菜单认证; 172 微信验证码认证; 173 第三方Portal认证; 174 终端下线、无感知认证; 175 Portal认证页面缓存到设备; 176 AP、AC、DCME兼容性; 177 终端兼容性; 178 状态与监控; 179 日志管理; 180 告警通知; 181 bug检验和版本发布; 182 第二轮功能测试; 183 设备管理; 184 设备管理前端; 185 AP管理前端; 186 AP管理注册、上线、上报; 187 AC管理前端; 188 AC管理注册、上线、上报; 189 DCME管理前端; 190 DCME注册、上线、上报; 191 二级AC; 192 二级AC注册公有云; 193 DCME; 194 时钟同步、设备重新发现，定时更新; 195 DCME上线、定时上报、ap定时上报、shell命令执行等; 196 AP、AC、DCME兼容性; 197 网络配置; 198 无线网络配置前端; 199 二级AC网络配置下发、同步; 200 DCME无线网络配置下发、同步; 201 AP无线网络配置下发、同步; 202 认证配置; 203 软件国际化; 204 portal认证; 205 账号认证; 206 海报认证 （扫码认证）; 207 短信认证; 208 一键认证; 209 微信公众号菜单认证; 210 微信验证码认证; 211 第三方Portal认证; 212 终端下线、无感知认证; 213 Portal认证页面缓存到设备; 214 AP、AC、DCME兼容性; 215 终端兼容性; 216 状态与监控; 217 日志管理; 218 bug回归和版本发布; 219 性能测试; 220 性能测试第一轮; 221 性能测试第二轮; 222 性能测试回归和测试报告撰写; 226 集成测试bug回归和报告撰写; 227 确认测试; 228 确认测试第一轮功能测试; 229 确认测试bug回归和报告撰写; 230 确认测试第二轮功能测试

Changed:

| ID | Task | Start | Finish | Duration | Complete | Total float | Predecessors | Other |
| --- | --- | --- | --- | --- | --- | --- | --- | --- |
| 6 | **云端服务** |  |  |  | 23% → 75% |  |  |  |
| 7 | **3.设备管理** |  |  |  | 43% → 87% |  |  |  |
| 10 | 3.3AP管理前端 |  |  |  | 60% → 90% |  |  |  |
| 11 | 3.3AP管理服务端 | 2019-09-18 A |  |  | 0% → 80% |  |  |  |
| 12 | 3.4AC管理前端 |  |  |  | 80% → 90% |  |  |  |
| 13 | 3.4AC管理服务端 |  |  |  | 85% → 95% |  |  |  |
| 14 | 3.6DCME管理前端 | 2019-09-23 A |  |  | 0% → 80% |  |  |  |
| 15 | 3.6DCME管理服务端 | 2019-09-27 A |  |  | 0% → 90% |  |  |  |
| 16 | **4.网络配置** |  |  |  | 26% → 70% |  |  |  |
| 17 | 4.1无线网络配置前端 |  |  |  | 80% → 95% |  |  |  |
| 18 | 4.1无线网络配置服务端 |  |  |  | 70% → 80% |  |  |  |
| 19 | **4.3认证配置** |  |  |  | 0% → 88% |  |  |  |
| 20 | 4.3.1认证策略设置前端 | 2019-09-18 A |  |  | 0% → 90% |  |  |  |
| 21 | 4.3.1认证策略设置服务端 | 2019-09-18 A |  |  | 0% → 80% |  |  |  |
| 22 | 4.3.4微信/短信设置前端 | 2019-09-25 A |  |  | 0% → 90% |  |  |  |
| 23 | 4.3.4微信/短信设置服务端 | 2019-09-24 A | 2019-09-24 A |  | 0% → 100% |  |  |  |
| 25 | **5.用户Portal认证** |  |  |  | 6% → 69% |  |  |  |
| 26 | 5.1账号认证5.2海报认证 （扫码认证）5.3短信认证5.4一键认证5.6微信公众号菜单认证5.7微信验证码认证5.9第三方Portal认证前端 | 2019-09-27 A |  |  | 0% → 80% |  |  |  |
| 27 | 5.1账号认证服务端 |  |  |  | 50% → 90% |  |  |  |
| 29 | 5.3短信认证服务端 | 2019-09-24 A |  |  | 0% → 90% |  |  |  |
| 30 | 5.4一键认证服务端 | 2019-09-27 A |  |  | 0% → 90% |  |  |  |
| 31 | 5.6微信公众号菜单认证服务端 | 2019-10-08 A |  |  | 0% → 80% |  |  |  |
| 32 | 5.7微信验证码认证服务端 | 2019-10-10 A |  |  | 0% → 80% |  |  |  |
| 34 | **6.状态与监控** |  |  |  | 0% → 97% |  |  |  |
| 35 | 6.1网络设备概况前端 | 2019-09-26 A | 2019-09-29 A |  | 0% → 100% |  | 14, DCME管理前端, DCME管理前端, DCME管理前端 → 14 |  |
| 36 | 6.1网络设备概况服务端 | 2019-09-19 A | 2019-09-20 A |  | 0% → 100% |  |  |  |
| 37 | 6.3日志管理前端 | 2019-09-24 A |  |  | 0% → 90% |  |  | resources 孙杨寸 → 习云芳 |
| 38 | 6.3日志管理服务端 | 2019-09-30 A | 2019-10-08 A |  | 0% → 100% |  |  |  |
| 47 | 数据上报下发 | 2019-09-25 A |  |  | 0% → 70% |  |  |  |
| 48 | **AC** |  |  |  | 12% → 52% |  |  |  |
| 49 | **二级AC开发** |  |  |  | 15% → 69% |  |  |  |
| 50 | **二级AC注册公有云** |  |  |  | 66% → 90% |  |  |  |
| 51 | 二级AC访问公有云url |  | 2019-09-12 A → 2019-09-12 |  | 100% → 90% | none → 1.8d |  |  |
| 52 | 二级AC接收并提取公有云回复的注册url |  |  |  | 80% → 90% | 0d → 1.8d |  |  |
| 53 | 二级AC解析注册url，建立MQTT连接 | 2019-09-17 A |  |  | 0% → 90% |  |  |  |
| 54 | **二级AC首次配置下发** | 2019-09-19 A |  |  | 0% → 44% |  |  |  |
| 55 | 二级AC首次连接清空配置 | 2019-09-19 A | 2019-09-24 A |  | 0% → 100% | 0d → none |  |  |
| 56 | 二级AC接收整体配置并解析生效 | 2019-09-24 A |  |  | 0% → 10% |  |  |  |
| 57 | **二级AC接口调整** | 2019-09-09 A |  |  | 0% → 73% |  |  |  |
| 58 | 公共接口实现 | 2019-09-09 A |  |  | 0% → 70% | 0d → 4d |  |  |
| 59 | 二级AC专有通信接口 | 2019-09-24 A |  |  | 0% → 80% |  |  |  |
| 64 | **DCME** | 2019-08-05 A |  |  | 0% → 20% |  |  |  |
| 65 | **开发** | 2019-08-05 A |  |  | 0% → 26% |  |  |  |
| 67 | 代码基础结构，包含多线程、mqtt数据发送接收等 | 2019-09-05 A |  |  | 0% → 85% |  |  |  |
| 68 | 时钟同步、设备重新发现，定时更新 | 2019-09-05 A |  |  | 0% → 85% |  |  |  |
| 70 | 设备发现，心跳，认证 | 2019-09-16 A |  |  | 0% → 85% |  |  |  |
| 103 | **功能测试** | 2019-11-12 → 2019-11-11 (-1d) | 2019-12-17 → 2019-11-29 (-18d) | 26d → 15d |  | 0d → none |  |  |
| 108 | 状态与监控 | 2019-10-28 → 2019-11-28 (+31d) | 2019-10-28 → 2019-11-29 (+32d) | 1d → 2d |  | 44d → none | none → 107 | constraint start no earlier than 2019-10-28 → none; resources 付培胜 [50%] → 邓皓 |
| 109 | **集成测试** | 2019-12-17 → 2019-12-02 (-15d) | 2020-01-01 → 2019-12-23 (-9d) | 11d → 16d |  |  |  | resources 所有 → none |
| 110 | 第一轮集成测试 | 2019-12-17 → 2019-12-02 (-15d) | 2019-12-24 → 2019-12-06 (-18d) |  |  | 0d → none | bug回归和版本发布 → none | resources none → 邓皓 |
| 111 | 第二轮集成测试 | 2019-12-24 → 2019-12-17 (-7d) | 2019-12-31 → 2019-12-23 (-8d) |  |  | 0d → none | 110 → 112 | resources none → 邓皓 |

## Version 6 (saved 2019-10-17, file imcloud公有云第二阶段开发计划v1.mpp)

Note of the change: 合并开发与测试计划

Last finish 2019-12-27 → 2020-01-08 (+12d).

Added:

| ID | Task | Duration | Start | Finish | Predecessors | Constraint | Resources |
| --- | --- | --- | --- | --- | --- | --- | --- |
| 103 | **测试准备工作** | 63.5d? | 2019-09-05 | 2019-12-09 |  |  |  |
| 104 | 测试计划和测试策略撰写 | 5d | 2019-09-05 | 2019-09-11 |  |  | 严文会 |
| 105 | **功能测试方案撰写和评审** | 20.5d? | 2019-09-30 | 2019-11-01 | 104 |  |  |
| 106 | **设备管理** | 13.5d? | 2019-09-30 | 2019-10-23 |  |  |  |
| 107 | **设备管理前端** | 6d | 2019-09-30 | 2019-10-12 |  |  |  |
| 108 | AP管理前端 | 1d | 2019-09-30 | 2019-09-30 |  |  | 刘江珊 |
| 109 | AP管理注册、上线、上报 | 1d | 2019-10-08 | 2019-10-08 | 108 |  | 刘江珊 |
| 110 | AC管理前端 | 1d | 2019-10-09 | 2019-10-09 | 109 |  | 刘江珊 |
| 111 | AC管理注册、上线、上报 | 1d | 2019-10-10 | 2019-10-10 | 110 |  | 刘江珊 |
| 112 | DCME管理前端 | 1d | 2019-10-11 | 2019-10-11 | 111 |  | 刘江珊 |
| 113 | DCME注册、上线、上报 | 1d | 2019-10-12 | 2019-10-12 | 112 |  | 刘江珊 |
| 114 | **二级AC** | 2d | 2019-10-14 | 2019-10-15 |  |  |  |
| 115 | 二级AC注册公有云 | 2d | 2019-10-14 | 2019-10-15 | 113 |  | 刘江珊 |
| 116 | **DCME** | 1d? | 2019-10-10 | 2019-10-11 |  |  |  |
| 117 | 时钟同步、设备重新发现，定时更新 | 1.5d | 2019-10-16 | 2019-10-17 | 115 |  | 刘江珊 |
| 118 | DCME上线、定时上报、ap定时上报、shell命令执行等 | 2d | 2019-10-17 | 2019-10-21 | 117 |  | 刘江珊 |
| 119 | AP、AC、DCME兼容性 | 2d | 2019-10-21 | 2019-10-23 | 118 |  | 刘江珊 |
| 120 | **网络配置** | 6d? | 2019-09-30 | 2019-10-12 |  |  |  |
| 121 | 无线网络配置前端 | 1.5d | 2019-09-30 | 2019-10-08 |  |  | 陈晶 |
| 122 | 二级AC网络配置下发、同步 | 1d | 2019-10-08 | 2019-10-09 | 121 |  | 陈晶 |
| 123 | DCME无线网络配置下发、同步 | 1d | 2019-10-09 | 2019-10-10 | 122 |  | 陈晶 |
| 124 | AP无线网络配置下发、同步 | 0.5d | 2019-10-10 | 2019-10-10 | 123 |  | 陈晶 |
| 125 | 认证配置 | 1.5d | 2019-10-11 | 2019-10-12 | 124 |  | 陈晶 |
| 126 | **portal认证** | 12d? | 2019-10-12 | 2019-10-28 |  |  |  |
| 127 | 账号认证 | 1d | 2019-10-12 | 2019-10-14 | 125 |  | 陈晶 |
| 128 | 海报认证 （扫码认证） | 1d | 2019-10-14 | 2019-10-15 | 127 |  | 陈晶 |
| 129 | 短信认证 | 1d | 2019-10-15 | 2019-10-16 | 128 |  | 陈晶 |
| 130 | 一键认证 | 1d | 2019-10-16 | 2019-10-17 | 129 |  | 陈晶 |
| 131 | 微信公众号菜单认证 | 1d | 2019-10-17 | 2019-10-18 | 130 |  | 陈晶 |
| 132 | 微信验证码认证 | 1d | 2019-10-18 | 2019-10-21 | 131 |  | 陈晶 |
| 133 | 第三方Portal认证 | 1d | 2019-10-21 | 2019-10-22 | 132 |  | 陈晶 |
| 134 | 终端下线、无感知认证 | 1d | 2019-10-22 | 2019-10-23 | 133 |  | 陈晶 |
| 135 | Portal认证页面缓存到设备 | 1d | 2019-10-23 | 2019-10-24 | 134 |  | 陈晶 |
| 136 | AP、AC、DCME兼容性 | 1d | 2019-10-24 | 2019-10-25 | 135 |  | 陈晶 |
| 137 | 终端兼容性 | 1d | 2019-10-25 | 2019-10-28 | 136 |  | 陈晶 |
| 139 | 日志管理 | 1.5d | 2019-10-29 | 2019-10-30 | 138 |  | 付培胜 [50%] |
| 140 | 告警通知 | 1d | 2019-10-30 | 2019-10-31 | 139 |  | 付培胜 [50%] |
| 141 | 软件国际化 | 1d | 2019-10-31 | 2019-11-01 | 140 |  | 付培胜 [50%] |
| 142 | 准入测试方案 | 1d | 2019-11-04 | 2019-11-04 |  | start no earlier than 2019-11-04 | 刘江珊 |
| 143 | 集成测试方案撰写和评审 | 5d | 2019-12-02 | 2019-12-09 | 141, 172, 210 |  | 付培胜 |
| 144 | 性能测试方案撰写和测试手段调研 | 3d | 2019-09-05 | 2019-09-09 |  |  | 黄淼森 |
| 145 | 测试环境搭建和相关测试设备的准备 | 3d | 2019-10-11 | 2019-10-14 | 144 | start no earlier than 2019-10-11 | 严文会 |
| 146 | 接口功能录制和预测试（后期利用jemeter进行接口回归） | 8d | 2019-10-15 | 2019-10-24 | 145 |  | 黄淼森 |
| 148 | **第一轮功能测试** | 14d | 2019-11-12 | 2019-11-29 |  |  |  |
| 149 | 账号注册登录和权限管理模块（涵盖账号管理/企业站点管理/管理员/用户管理） | 4d | 2019-11-12 | 2019-11-15 |  |  | 黄淼森 |
| 150 | 账号注册登录和权限管理模块（涵盖账号管理/企业站点管理/管理员/用户管理） | 2d | 2019-11-18 | 2019-11-19 | 149 |  | 黄淼森 |
| 151 | 账号注册登录和权限管理模块Bug回归和测试报告撰写 | 2d | 2019-11-20 | 2019-11-21 | 150 |  | 黄淼森 |
| 152 | **设备管理** | 8d? | 2019-11-12 | 2019-11-21 |  |  |  |
| 153 | **设备管理前端** | 5d? | 2019-11-12 | 2019-11-18 |  |  |  |
| 154 | AP管理前端 | 0.5d | 2019-11-12 | 2019-11-12 |  |  | 刘江珊 |
| 155 | AP管理注册、上线、上报 | 1d | 2019-11-12 | 2019-11-13 | 154 |  | 刘江珊 |
| 156 | AC管理前端 | 0.5d | 2019-11-13 | 2019-11-13 | 155 |  | 刘江珊 |
| 157 | AC管理注册、上线、上报 | 1d | 2019-11-14 | 2019-11-14 | 156 |  | 刘江珊 |
| 158 | DCME管理前端 | 0.5d | 2019-11-15 | 2019-11-15 | 157 |  | 刘江珊 |
| 159 | DCME注册、上线、上报 | 1d | 2019-11-15 | 2019-11-18 | 158 |  | 刘江珊 |
| 160 | **二级AC** | 2d? | 2019-11-12 | 2019-11-13 |  |  |  |
| 161 | 二级AC注册公有云 | 1d | 2019-11-18 | 2019-11-19 | 159 |  | 刘江珊 |
| 162 | **DCME** | 2d? | 2019-11-19 | 2019-11-20 |  |  |  |
| 163 | 时钟同步、设备重新发现，定时更新 | 0.5d | 2019-11-19 | 2019-11-19 | 161 |  | 刘江珊 |
| 164 | DCME上线、定时上报、ap定时上报、shell命令执行等 | 1d | 2019-11-20 | 2019-11-20 | 163 |  | 刘江珊 |
| 165 | AP、AC、DCME兼容性 | 1d | 2019-11-21 | 2019-11-21 | 164 |  | 刘江珊 |
| 166 | **网络配置** | 4d? | 2019-11-22 | 2019-11-27 |  |  |  |
| 167 | 无线网络配置前端 | 0.5d | 2019-11-22 | 2019-11-22 | 165 |  | 刘江珊 |
| 168 | 二级AC网络配置下发、同步 | 0.5d | 2019-11-22 | 2019-11-22 | 167 |  | 刘江珊 |
| 169 | DCME无线网络配置下发、同步 | 0.5d | 2019-11-25 | 2019-11-25 | 168 |  | 刘江珊 |
| 170 | AP无线网络配置下发、同步 | 0.5d | 2019-11-25 | 2019-11-25 | 169 |  | 刘江珊 |
| 171 | 认证配置 | 1d | 2019-11-26 | 2019-11-26 | 170 |  | 刘江珊 |
| 172 | 软件国际化 | 1d | 2019-11-27 | 2019-11-27 | 171 |  | 刘江珊 |
| 173 | **portal认证** | 10d? | 2019-11-12 | 2019-11-25 |  |  |  |
| 174 | 账号认证 | 1d | 2019-11-12 | 2019-11-12 |  |  | 陈晶 |
| 175 | 海报认证 （扫码认证） | 1d | 2019-11-13 | 2019-11-13 | 174 |  | 陈晶 |
| 176 | 短信认证 | 0.5d | 2019-11-14 | 2019-11-14 | 175 |  | 陈晶 |
| 177 | 一键认证 | 0.5d | 2019-11-14 | 2019-11-14 | 176 |  | 陈晶 |
| 178 | 微信公众号菜单认证 | 1d | 2019-11-15 | 2019-11-15 | 177 |  | 陈晶 |
| 179 | 微信验证码认证 | 1d | 2019-11-18 | 2019-11-18 | 178 |  | 陈晶 |
| 180 | 第三方Portal认证 | 1d | 2019-11-19 | 2019-11-19 | 179 |  | 陈晶 |
| 181 | 终端下线、无感知认证 | 1.5d | 2019-11-20 | 2019-11-21 | 180 |  | 陈晶 |
| 182 | Portal认证页面缓存到设备 | 0.5d | 2019-11-21 | 2019-11-21 | 181 |  | 陈晶 |
| 183 | AP、AC、DCME兼容性 | 1d | 2019-11-22 | 2019-11-22 | 182 |  | 陈晶 |
| 184 | 终端兼容性 | 1d | 2019-11-25 | 2019-11-25 | 183 |  | 陈晶 |
| 185 | 状态与监控 | 0.5d? | 2019-11-26 | 2019-11-26 | 184 |  | 陈晶 |
| 186 | 日志管理 | 1d | 2019-11-26 | 2019-11-27 | 185 |  | 陈晶 |
| 187 | 告警通知 | 0.5d | 2019-11-27 | 2019-11-27 | 186 |  | 陈晶 |
| 188 | bug检验和版本发布 | 2d | 2019-11-28 | 2019-11-29 | 187 |  | 刘江珊; 陈晶 |
| 189 | **第二轮功能测试** | 12d | 2019-12-02 | 2019-12-17 |  |  |  |
| 190 | **设备管理** | 7d? | 2019-12-02 | 2019-12-10 |  |  |  |
| 191 | **设备管理前端** | 3d? | 2019-12-02 | 2019-12-04 |  |  |  |
| 192 | AP管理前端 | 0.5d | 2019-12-02 | 2019-12-02 | 188 |  | 陈晶 |
| 193 | AP管理注册、上线、上报 | 0.5d | 2019-12-02 | 2019-12-02 | 192 |  | 陈晶 |
| 194 | AC管理前端 | 0.5d | 2019-12-03 | 2019-12-03 | 193 |  | 陈晶 |
| 195 | AC管理注册、上线、上报 | 0.5d | 2019-12-03 | 2019-12-03 | 194 |  | 陈晶 |
| 196 | DCME管理前端 | 0.5d | 2019-12-04 | 2019-12-04 | 195 |  | 陈晶 |
| 197 | DCME注册、上线、上报 | 0.5d | 2019-12-04 | 2019-12-04 | 196 |  | 陈晶 |
| 198 | **二级AC** | 2d? | 2019-12-02 | 2019-12-03 |  |  |  |
| 199 | 二级AC注册公有云 | 1d | 2019-12-05 | 2019-12-05 | 197 |  | 陈晶 |
| 200 | **DCME** | 2d? | 2019-12-06 | 2019-12-09 |  |  |  |
| 201 | 时钟同步、设备重新发现，定时更新 | 0.5d | 2019-12-06 | 2019-12-06 | 199 |  | 陈晶 |
| 202 | DCME上线、定时上报、ap定时上报、shell命令执行等 | 1d | 2019-12-06 | 2019-12-09 | 201 |  | 陈晶 |
| 203 | AP、AC、DCME兼容性 | 1d | 2019-12-09 | 2019-12-10 | 202 |  | 陈晶 |
| 204 | **网络配置** | 4d? | 2019-12-10 | 2019-12-13 |  |  |  |
| 205 | 无线网络配置前端 | 0.5d | 2019-12-10 | 2019-12-10 | 203 |  | 陈晶 |
| 206 | 二级AC网络配置下发、同步 | 0.5d | 2019-12-11 | 2019-12-11 | 205 |  | 陈晶 |
| 207 | DCME无线网络配置下发、同步 | 0.5d | 2019-12-11 | 2019-12-11 | 206 |  | 陈晶 |
| 208 | AP无线网络配置下发、同步 | 0.5d | 2019-12-12 | 2019-12-12 | 207 |  | 陈晶 |
| 209 | 认证配置 | 1d | 2019-12-12 | 2019-12-13 | 208 |  | 陈晶 |
| 210 | 软件国际化 | 0.5d | 2019-12-02 | 2019-12-02 | 188 |  | 刘江珊 |
| 211 | **portal认证** | 7d | 2019-12-04 | 2019-12-12 |  |  |  |
| 212 | 账号认证 | 1d | 2019-12-02 | 2019-12-03 | 210 |  | 刘江珊 |
| 213 | 海报认证 （扫码认证） | 0.5d | 2019-12-03 | 2019-12-03 | 212 |  | 刘江珊 |
| 214 | 短信认证 | 0.5d | 2019-12-04 | 2019-12-04 | 213 |  | 刘江珊 |
| 215 | 一键认证 | 0.5d | 2019-12-04 | 2019-12-04 | 214 |  | 刘江珊 |
| 216 | 微信公众号菜单认证 | 0.5d | 2019-12-05 | 2019-12-05 | 215 |  | 刘江珊 |
| 217 | 微信验证码认证 | 0.5d | 2019-12-05 | 2019-12-05 | 216 |  | 刘江珊 |
| 218 | 第三方Portal认证 | 1d | 2019-12-06 | 2019-12-06 | 217 |  | 刘江珊 |
| 219 | 终端下线、无感知认证 | 1d | 2019-12-09 | 2019-12-09 | 218 |  | 刘江珊 |
| 220 | Portal认证页面缓存到设备 | 0.5d | 2019-12-10 | 2019-12-10 | 219 |  | 刘江珊 |
| 221 | AP、AC、DCME兼容性 | 1d | 2019-12-10 | 2019-12-11 | 220 |  | 刘江珊 |
| 222 | 终端兼容性 | 1d | 2019-12-11 | 2019-12-12 | 221 |  | 刘江珊 |
| 223 | 状态与监控 | 0.5d? | 2019-12-12 | 2019-12-12 | 222 |  | 刘江珊 |
| 224 | 日志管理 | 0.5d | 2019-12-13 | 2019-12-13 | 223 |  | 刘江珊 |
| 225 | bug回归和版本发布 | 2d | 2019-12-13 | 2019-12-17 | 224 |  | 刘江珊; 陈晶 |
| 226 | **性能测试** | 10d | 2019-11-28 | 2019-12-11 |  |  |  |
| 227 | 性能测试第一轮 | 6d | 2019-11-28 | 2019-12-05 | 151 |  | 黄淼森 |
| 228 | 性能测试第二轮 | 3d | 2019-12-06 | 2019-12-10 | 227 |  | 黄淼森 |
| 229 | 性能测试回归和测试报告撰写 | 1d | 2019-12-11 | 2019-12-11 | 228 |  | 黄淼森 |
| 233 | 集成测试bug回归和报告撰写 | 1d | 2019-12-31 | 2020-01-01 | 232 |  |  |
| 234 | **确认测试** | 5d | 2020-01-01 | 2020-01-08 |  |  |  |
| 235 | 确认测试第一轮功能测试 | 2d | 2020-01-01 | 2020-01-03 | 233 |  | 陈晶; 刘江珊 |
| 236 | 确认测试bug回归和报告撰写 | 1d | 2020-01-03 | 2020-01-06 | 235 |  | 陈晶; 刘江珊 |
| 237 | 确认测试第二轮功能测试 | 2d | 2020-01-06 | 2020-01-08 | 236 |  | 陈晶; 刘江珊 |

Removed: 104 设备管理; 105 无线网络配置; 106 认证策略配置; 107 Portal认证; 112 性能测试; 113 确认测试; 114 产品发布

Changed:

| ID | Task | Start | Finish | Duration | Complete | Total float | Predecessors | Other |
| --- | --- | --- | --- | --- | --- | --- | --- | --- |
| 1 | **Imcloud公有云** |  | 2019-12-27 → 2020-01-08 (+12d) | 116d? → 123.5d? | 38% → 30% |  |  |  |
| 138 | 状态与监控 | 2019-11-28 → 2019-10-28 (-31d) | 2019-11-29 → 2019-10-28 (-32d) | 2d → 1d |  | none → 43d | Portal认证 → none | constraint none → start no earlier than 2019-10-28; resources 邓皓 → 付培胜 [50%] |
| 147 | **功能测试** | 2019-11-11 → 2019-11-12 (+1d) | 2019-11-29 → 2019-12-17 (+18d) | 15d → 26d |  | none → 0d |  |  |
| 230 | **集成测试** | 2019-12-02 → 2019-12-17 (+15d) | 2019-12-23 → 2020-01-01 (+9d) | 16d → 11d |  |  |  | resources none → 所有 |
| 231 | 第一轮集成测试 | 2019-12-02 → 2019-12-17 (+15d) | 2019-12-06 → 2019-12-24 (+18d) |  |  | none → 0d | none → 225 | resources 邓皓 → none |
| 232 | 第二轮集成测试 | 2019-12-17 → 2019-12-24 (+7d) | 2019-12-23 → 2019-12-31 (+8d) |  |  | none → 0d | 性能测试 → 231 | resources 邓皓 → none |
