# netcollege开发计划

How a schedule from MS Project changed from version to version. A marks actual dates.

## Version 1 (saved 2019-09-19)

Note of the change: project doc

| ID | WBS | Task | Duration | Start | Finish | Predecessors | Complete | Total float |
| --- | --- | --- | --- | --- | --- | --- | --- | --- |
| 1 | 1 | **netcollege开发** | 65.29d | 2019-09-11 08:00 A | 2019-12-17 10:19 |  | 5% | 0d |
| 2 | 1.1 | **开发准备/代码分析** | 6d | 2019-09-11 08:00 A | 2019-09-19 17:00 |  | 85% | 0d |
| 3 |  | 建立代码版本控制git仓库 | 0.5d | 2019-09-12 08:00 A | 2019-09-12 12:00 A |  | 100% |  |
| 4 |  | 分析研究代码结构 | 4d | 2019-09-11 08:00 A | 2019-09-17 17:00 A |  | 100% |  |
| 5 |  | 导入前端框架依赖js/css/font/创建新界面layout/header/footer/menu | 2d | 2019-09-18 08:00 A | 2019-09-19 17:00 | 4 | 50% | 0d |
| 6 | 1.2 | **后台功能** | 40.01d | 2019-09-20 08:00 | 2019-11-20 08:02 |  |  | 0d |
| 7 |  | 后台首页 | 0.56d | 2019-09-20 08:00 | 2019-09-20 13:26 | 5 |  | 7.78d |
| 8 | 1.2.2 | **设备管理** | 8.33d | 2019-09-20 08:00 | 2019-10-08 10:40 |  |  | 0d |
| 9 | 1.2.2.1 | **实验设备管理** | 2.78d | 2019-09-20 13:26 | 2019-09-25 10:40 |  |  | 7.78d |
| 10 |  | 实验设备列表 | 0.56d | 2019-09-20 13:26 | 2019-09-23 08:53 | 7 |  | 7.78d |
| 11 |  | 新增实验设备 | 0.56d | 2019-09-23 08:53 | 2019-09-23 14:20 | 10 |  | 7.78d |
| 12 |  | 查看设备状态 | 0.56d | 2019-09-23 14:20 | 2019-09-24 09:46 | 11 |  | 7.78d |
| 13 |  | 编辑实验设备 | 0.56d | 2019-09-24 09:46 | 2019-09-24 15:13 | 12 |  | 7.78d |
| 14 |  | 删除实验设备 | 0.56d | 2019-09-24 15:13 | 2019-09-25 10:40 | 13 |  | 7.78d |
| 15 | 1.2.2.2 | **设备类别设置** | 2.86d | 2019-09-20 08:00 | 2019-09-24 15:51 |  |  | 0d |
| 16 |  | 设备类别列表 | 0.71d | 2019-09-20 08:00 | 2019-09-20 14:42 | 5 |  | 0d |
| 17 |  | 新建设备类别 | 0.71d | 2019-09-20 14:42 | 2019-09-23 11:25 | 16 |  | 0d |
| 18 |  | 编辑设备类别 | 0.71d | 2019-09-23 11:25 | 2019-09-24 09:08 | 17 |  | 0d |
| 19 |  | 删除设备类别 | 0.71d | 2019-09-24 09:08 | 2019-09-24 15:51 | 18 |  | 0d |
| 20 | 1.2.2.3 | **设备型号管理** | 2.22d | 2019-09-25 10:40 | 2019-09-27 13:27 |  |  | 7.78d |
| 21 |  | 设备型号列表 | 0.56d | 2019-09-25 10:40 | 2019-09-25 16:06 | 14 |  | 7.78d |
| 22 |  | 新建设备型号 | 0.56d | 2019-09-25 16:06 | 2019-09-26 11:33 | 21 |  | 7.78d |
| 23 |  | 编辑设备型号 | 0.56d | 2019-09-26 11:33 | 2019-09-27 08:00 | 22 |  | 7.78d |
| 24 |  | 删除设备型号 | 0.56d | 2019-09-27 08:00 | 2019-09-27 13:27 | 23 |  | 7.78d |
| 25 | 1.2.2.4 | **设备命令过滤** | 4.29d | 2019-09-24 15:51 | 2019-09-30 09:09 |  |  | 0d |
| 26 |  | 设备命令列表 | 0.71d | 2019-09-24 15:51 | 2019-09-25 13:34 | 19 |  | 0d |
| 27 |  | 添加过滤指令-新增禁止指令例外参数 | 0.71d | 2019-09-25 13:34 | 2019-09-26 10:17 | 26 |  | 0d |
| 28 |  | 查看禁止指令例外参数-编辑例外参数 | 0.71d | 2019-09-26 10:17 | 2019-09-27 08:00 | 27 |  | 0d |
| 29 |  | 查看禁止指令例外参数-删除列外参数 | 0.71d | 2019-09-27 08:00 | 2019-09-27 14:43 | 28 |  | 0d |
| 30 |  | 编辑命令-新增禁止指令例外参数 | 0.71d | 2019-09-27 14:43 | 2019-09-29 11:26 | 29 |  | 0d |
| 31 |  | 删除命令 | 0.71d | 2019-09-29 11:26 | 2019-09-30 09:09 | 30 |  | 0d |
| 32 | 1.2.2.5 | **虚拟化设备管理** | 2.78d | 2019-09-27 13:27 | 2019-10-08 10:40 |  |  | 7.78d |
| 33 |  | 虚拟化设备列表 | 0.56d | 2019-09-27 13:27 | 2019-09-29 08:53 | 24 |  | 7.78d |
| 34 |  | 新增虚拟化设备 | 0.56d | 2019-09-29 08:53 | 2019-09-29 14:20 | 33 |  | 7.78d |
| 35 |  | 查看虚拟系统-新增虚拟系统 | 0.56d | 2019-09-29 14:20 | 2019-09-30 09:47 | 34 |  | 7.78d |
| 36 |  | 编辑虚拟化设备 | 0.56d | 2019-09-30 09:47 | 2019-09-30 15:13 | 35 |  | 7.78d |
| 37 |  | 删除虚拟化设备 | 0.56d | 2019-09-30 15:13 | 2019-10-08 10:40 | 36 |  | 7.78d |
| 38 | 1.2.3 | **实验室管理** | 9.29d | 2019-09-30 09:09 | 2019-10-17 11:26 |  |  | 0d |
| 39 | 1.2.3.1 | **实验室管理** | 9.29d | 2019-09-30 09:09 | 2019-10-17 11:26 |  |  | 0d |
| 40 |  | 实验室列表 | 0.71d | 2019-09-30 09:09 | 2019-09-30 15:51 | 31 |  | 0d |
| 41 |  | 新建实验室 | 0.71d | 2019-09-30 15:51 | 2019-10-08 13:34 | 40 |  | 0d |
| 42 |  | 查看实验组-新建实验组 | 0.71d | 2019-10-08 13:34 | 2019-10-09 10:17 | 41 |  | 0d |
| 43 |  | 查看实验组-克隆实验组 | 0.71d | 2019-10-09 10:17 | 2019-10-10 08:00 | 42 |  | 0d |
| 44 |  | 查看实验组-查看拥有设备-查看设备状态 | 0.71d | 2019-10-10 08:00 | 2019-10-10 14:43 | 43 |  | 0d |
| 45 |  | 查看实验组-查看拥有设备-编辑设备信息 | 0.71d | 2019-10-10 14:43 | 2019-10-11 11:26 | 44 |  | 0d |
| 46 |  | 查看实验组-查看拥有设备-删除设备 | 0.71d | 2019-10-11 11:26 | 2019-10-12 09:09 | 45 |  | 0d |
| 47 |  | 查看实验组-查看拥有设备-安排实验用户-实验用户列表 | 0.71d | 2019-10-12 09:09 | 2019-10-12 15:52 | 46 |  | 0d |
| 48 |  | 查看实验组-查看拥有设备-安排实验用户-安排实验用户 | 0.71d | 2019-10-12 15:52 | 2019-10-14 13:35 | 47 |  | 0d |
| 49 |  | 查看实验组-编辑实验组 | 0.71d | 2019-10-14 13:35 | 2019-10-15 10:18 | 48 |  | 0d |
| 50 |  | 查看实验组-删除实验组 | 0.71d | 2019-10-15 10:18 | 2019-10-16 08:00 | 49 |  | 0d |
| 51 |  | 编辑实验室 | 0.71d | 2019-10-16 08:00 | 2019-10-16 14:43 | 50 |  | 0d |
| 52 |  | 删除实验室 | 0.71d | 2019-10-16 14:43 | 2019-10-17 11:26 | 51 |  | 0d |
| 53 | 1.2.3.2 | **底层设备控制模块** | 2.78d | 2019-10-08 10:40 | 2019-10-11 08:54 |  |  | 7.78d |
| 54 |  | 底层设备控制模块列表 | 0.56d | 2019-10-08 10:40 | 2019-10-08 16:07 | 37 |  | 7.78d |
| 55 |  | 新增底层设备控制模块 | 0.56d | 2019-10-08 16:07 | 2019-10-09 11:33 | 54 |  | 7.78d |
| 56 |  | 查看使用情况 | 0.56d | 2019-10-09 11:33 | 2019-10-10 08:00 | 55 |  | 7.78d |
| 57 |  | 编辑底层设备控制模块 | 0.56d | 2019-10-10 08:00 | 2019-10-10 13:27 | 56 |  | 7.78d |
| 58 |  | 删除底层设备控制模块 | 0.56d | 2019-10-10 13:27 | 2019-10-11 08:54 | 57 |  | 7.78d |
| 59 | 1.2.3.3 | **网络拓扑管理模块** | 2.22d | 2019-10-11 08:54 | 2019-10-14 10:40 |  |  | 7.78d |
| 60 |  | 网络拓扑管理模块列表 | 0.56d | 2019-10-11 08:54 | 2019-10-11 14:20 | 58 |  | 7.78d |
| 61 |  | 新增络拓扑管理模块 | 0.56d | 2019-10-11 14:20 | 2019-10-12 09:47 | 60 |  | 7.78d |
| 62 |  | 编辑络拓扑管理模块 | 0.56d | 2019-10-12 09:47 | 2019-10-12 15:14 | 61 |  | 7.78d |
| 63 |  | 删除络拓扑管理模块 | 0.56d | 2019-10-12 15:14 | 2019-10-14 10:40 | 62 |  | 7.78d |
| 64 | 1.2.4 | **课程管理** | 13.81d | 2019-10-14 10:40 | 2019-11-01 09:10 |  |  | 0d |
| 65 | 1.2.4.1 | **课程管理** | 10.72d | 2019-10-17 11:26 | 2019-11-01 09:10 |  |  | 0d |
| 66 |  | 课程列表 | 0.71d | 2019-10-17 11:26 | 2019-10-18 09:09 | 52 |  | 0d |
| 67 |  | 新建课程 | 0.71d | 2019-10-18 09:09 | 2019-10-18 15:52 | 66 |  | 0d |
| 68 |  | 课件管理-课件列表 | 0.71d | 2019-10-18 15:52 | 2019-10-21 13:35 | 67 |  | 0d |
| 69 |  | 课件管理-导入课件 | 0.71d | 2019-10-21 13:35 | 2019-10-22 10:18 | 68 |  | 0d |
| 70 |  | 课件管理-编辑课件 | 0.71d | 2019-10-22 10:18 | 2019-10-23 08:01 | 69 |  | 0d |

| ID | WBS | Task | Duration | Start | Finish | Predecessors | Total float |
| --- | --- | --- | --- | --- | --- | --- | --- |
| 71 |  | 课件管理-删除课件 | 0.71d | 2019-10-23 08:01 | 2019-10-23 14:44 | 70 | 0d |
| 72 |  | 课堂作业-课程作业列表 | 0.71d | 2019-10-23 14:44 | 2019-10-24 11:27 | 71 | 0d |
| 73 |  | 课堂作业-作业统计 | 0.71d | 2019-10-24 11:27 | 2019-10-25 09:09 | 72 | 0d |
| 74 |  | 课堂作业-布置作业 | 0.71d | 2019-10-25 09:09 | 2019-10-25 15:52 | 73 | 0d |
| 75 |  | 编辑课程-课程设置 | 0.71d | 2019-10-25 15:52 | 2019-10-28 13:35 | 74 | 0d |
| 76 |  | 编辑课程-课程信息-编辑课程信息 | 0.71d | 2019-10-28 13:35 | 2019-10-29 10:18 | 75 | 0d |
| 77 |  | 编辑课程-实验步骤-编辑实验步骤 | 0.71d | 2019-10-29 10:18 | 2019-10-30 08:01 | 76 | 0d |
| 78 |  | 编辑课程-教学大纲-编辑教学大纲 | 0.71d | 2019-10-30 08:01 | 2019-10-30 14:44 | 77 | 0d |
| 79 |  | 编辑课程-网络拓扑 | 0.71d | 2019-10-30 14:44 | 2019-10-31 11:27 | 78 | 0d |
| 80 |  | 删除课程 | 0.71d | 2019-10-31 11:27 | 2019-11-01 09:10 | 79 | 0d |
| 81 | 1.2.4.2 | **课程分类** | 0.56d | 2019-10-14 10:40 | 2019-10-14 16:07 |  | 7.78d |
| 82 |  | 课程分类管理-添加二级分类 | 0.56d | 2019-10-14 10:40 | 2019-10-14 16:07 | 63 | 7.78d |
| 83 | 1.2.4.3 | **课程调度** | 1.67d | 2019-10-14 16:07 | 2019-10-16 13:27 |  | 7.78d |
| 84 |  | 课程调度-课程调度列表 | 0.56d | 2019-10-14 16:07 | 2019-10-15 11:34 | 82 | 7.78d |
| 85 |  | 课程调度-加载课程 | 0.56d | 2019-10-15 11:34 | 2019-10-16 08:00 | 84 | 7.78d |
| 86 |  | 课程调度-添加实验组 | 0.56d | 2019-10-16 08:00 | 2019-10-16 13:27 | 85 | 7.78d |
| 87 | 1.2.5 | **拓扑管理** | 5.56d | 2019-10-16 13:27 | 2019-10-24 08:54 |  | 7.78d |
| 88 | 1.2.5.1 | **网络拓扑分类** | 2.22d | 2019-10-16 13:27 | 2019-10-18 15:14 |  | 7.78d |
| 89 |  | 网络拓扑分类列表 | 0.56d | 2019-10-16 13:27 | 2019-10-17 08:54 | 86 | 7.78d |
| 90 |  | 添加网络拓扑分类 | 0.56d | 2019-10-17 08:54 | 2019-10-17 14:21 | 89 | 7.78d |
| 91 |  | 编辑网络拓扑分类 | 0.56d | 2019-10-17 14:21 | 2019-10-18 09:47 | 90 | 7.78d |
| 92 |  | 删除网络拓扑分类 | 0.56d | 2019-10-18 09:47 | 2019-10-18 15:14 | 91 | 7.78d |
| 93 | 1.2.5.2 | **拓扑端口管理** | 1.67d | 2019-10-18 15:14 | 2019-10-22 11:34 |  | 7.78d |
| 94 |  | 拓扑端口列表 | 0.56d | 2019-10-18 15:14 | 2019-10-21 10:41 | 92 | 7.78d |
| 95 |  | 新增拓扑端口 | 0.56d | 2019-10-21 10:41 | 2019-10-21 16:07 | 94 | 7.78d |
| 96 |  | 删除拓扑端口 | 0.56d | 2019-10-21 16:07 | 2019-10-22 11:34 | 95 | 7.78d |
| 97 | 1.2.5.3 | **网络拓扑设计** | 1.67d | 2019-10-22 11:34 | 2019-10-24 08:54 |  | 7.78d |
| 98 |  | 添加网络拓扑 | 0.56d | 2019-10-22 11:34 | 2019-10-23 08:01 | 96 | 7.78d |
| 99 |  | 编辑网络拓扑 | 0.56d | 2019-10-23 08:01 | 2019-10-23 13:27 | 98 | 7.78d |
| 100 |  | 删除网络拓扑 | 0.56d | 2019-10-23 13:27 | 2019-10-24 08:54 | 99 | 7.78d |
| 101 | 1.2.6 | **用户管理** | 12.46d | 2019-10-24 08:54 | 2019-11-11 13:36 |  | 0d |
| 102 | 1.2.6.1 | **组织管理** | 2.22d | 2019-10-24 08:54 | 2019-10-28 10:41 |  | 7.78d |
| 103 |  | 组织管理列表 | 0.56d | 2019-10-24 08:54 | 2019-10-24 14:21 | 100 | 7.78d |
| 104 |  | 新建组织 | 0.56d | 2019-10-24 14:21 | 2019-10-25 09:48 | 103 | 7.78d |
| 105 |  | 编辑组织 | 0.56d | 2019-10-25 09:48 | 2019-10-25 15:14 | 104 | 7.78d |
| 106 |  | 删除组织 | 0.56d | 2019-10-25 15:14 | 2019-10-28 10:41 | 105 | 7.78d |
| 107 | 1.2.6.2 | **审核用户** | 1.11d | 2019-10-28 10:41 | 2019-10-29 11:34 |  | 7.78d |
| 108 |  | 审核用户列表 | 0.56d | 2019-10-28 10:41 | 2019-10-28 16:08 | 106 | 7.78d |
| 109 |  | 删除审核用户 | 0.56d | 2019-10-28 16:08 | 2019-10-29 11:34 | 108 | 7.78d |
| 110 | 1.2.6.3 | **用户管理** | 6.43d | 2019-11-01 09:10 | 2019-11-11 13:36 |  | 0d |
| 111 |  | 用户列表 | 0.71d | 2019-11-01 09:10 | 2019-11-01 15:53 | 80 | 0d |
| 112 |  | 新增用户 | 0.71d | 2019-11-01 15:53 | 2019-11-04 13:36 | 111 | 0d |
| 113 |  | 密文导入用户 | 0.71d | 2019-11-04 13:36 | 2019-11-05 10:18 | 112 | 0d |
| 114 |  | 明文导入用户 | 0.71d | 2019-11-05 10:18 | 2019-11-06 08:01 | 113 | 0d |
| 115 |  | 导出用户 | 0.71d | 2019-11-06 08:01 | 2019-11-06 14:44 | 114 | 0d |
| 116 |  | 启用/锁定用户 | 0.71d | 2019-11-06 14:44 | 2019-11-07 11:27 | 115 | 0d |
| 117 |  | 查看用户信息 | 0.71d | 2019-11-07 11:27 | 2019-11-08 09:10 | 116 | 0d |
| 118 |  | 编辑用户 | 0.71d | 2019-11-08 09:10 | 2019-11-08 15:53 | 117 | 0d |
| 119 |  | 删除用户 | 0.71d | 2019-11-08 15:53 | 2019-11-11 13:36 | 118 | 0d |
| 120 | 1.2.7 | **查询统计** | 7.78d | 2019-10-29 11:34 | 2019-11-08 09:48 |  | 7.78d |
| 121 | 1.2.7.1 | **用户考勤** | 1.67d | 2019-10-29 11:34 | 2019-10-31 08:54 |  | 7.78d |
| 122 |  | 用户考勤列表 | 0.56d | 2019-10-29 11:34 | 2019-10-30 08:01 | 109 | 7.78d |
| 123 |  | 编辑用户考勤 | 0.56d | 2019-10-30 08:01 | 2019-10-30 13:28 | 122 | 7.78d |
| 124 |  | 删除用户考勤 | 0.56d | 2019-10-30 13:28 | 2019-10-31 08:54 | 123 | 7.78d |
| 125 | 1.2.7.2 | **在线用户** | 1.11d | 2019-10-31 08:54 | 2019-11-01 09:48 |  | 7.78d |
| 126 |  | 在线用户列表 | 0.56d | 2019-10-31 08:54 | 2019-10-31 14:21 | 124 | 7.78d |
| 127 |  | 查看在线用户详情 | 0.56d | 2019-10-31 14:21 | 2019-11-01 09:48 | 126 | 7.78d |
| 128 | 1.2.7.3 | **命令日志** | 1.67d | 2019-11-01 09:48 | 2019-11-04 16:08 |  | 7.78d |
| 129 |  | 命令日志列表 | 0.56d | 2019-11-01 09:48 | 2019-11-01 15:15 | 127 | 7.78d |
| 130 |  | 查看详细命令 | 0.56d | 2019-11-01 15:15 | 2019-11-04 10:41 | 129 | 7.78d |
| 131 |  | 删除命令日志 | 0.56d | 2019-11-04 10:41 | 2019-11-04 16:08 | 130 | 7.78d |
| 132 | 1.2.7.4 | **操作日志** | 1.11d | 2019-11-04 16:08 | 2019-11-06 08:01 |  | 7.78d |
| 133 |  | 操作日志列表 | 0.56d | 2019-11-04 16:08 | 2019-11-05 11:35 | 131 | 7.78d |
| 134 |  | 查看操作日志 | 0.56d | 2019-11-05 11:35 | 2019-11-06 08:01 | 133 | 7.78d |
| 135 | 1.2.7.5 | **恢复日志** | 1.11d | 2019-11-06 08:01 | 2019-11-07 08:55 |  | 7.78d |
| 136 |  | 恢复日志列表 | 0.56d | 2019-11-06 08:01 | 2019-11-06 13:28 | 134 | 7.78d |
| 137 |  | 查看恢复日志备注 | 0.56d | 2019-11-06 13:28 | 2019-11-07 08:55 | 136 | 7.78d |
| 138 | 1.2.7.6 | **设备使用情况** | 1.11d | 2019-11-07 08:55 | 2019-11-08 09:48 |  | 7.78d |
| 139 |  | 备使用情况列表 | 0.56d | 2019-11-07 08:55 | 2019-11-07 14:21 | 137 | 7.78d |
| 140 |  | 删除设备使用情况 | 0.56d | 2019-11-07 14:21 | 2019-11-08 09:48 | 139 | 7.78d |

| ID | WBS | Task | Duration | Start | Finish | Predecessors | Total float |
| --- | --- | --- | --- | --- | --- | --- | --- |
| 141 | 1.2.8 | **实验帮助** | 2.14d | 2019-11-11 13:36 | 2019-11-13 14:45 |  | 0d |
| 142 |  | 实验帮助-实验帮助列表 | 0.71d | 2019-11-11 13:36 | 2019-11-12 10:19 | 119 | 0d |
| 143 |  | 实验帮助-上传实验帮助 | 0.71d | 2019-11-12 10:19 | 2019-11-13 08:02 | 142 | 0d |
| 144 |  | 实验帮助-删除实验帮助 | 0.71d | 2019-11-13 08:02 | 2019-11-13 14:45 | 143 | 0d |
| 145 | 1.2.9 | **设备恢复** | 0.56d | 2019-11-08 09:48 | 2019-11-08 15:15 |  | 7.78d |
| 146 |  | 设备恢复-设备恢复列表 | 0.56d | 2019-11-08 09:48 | 2019-11-08 15:15 | 140 | 7.78d |
| 147 | 1.2.10 | **系统管理** | 4.29d | 2019-11-13 14:45 | 2019-11-20 08:02 |  | 0d |
| 148 |  | 系统设置-编辑系统设置 | 0.71d | 2019-11-13 14:45 | 2019-11-14 11:27 | 144 | 0d |
| 149 |  | 系统公告-系统公告列表 | 0.71d | 2019-11-14 11:27 | 2019-11-15 09:10 | 148 | 0d |
| 150 |  | 系统公告-发布系统公告 | 0.71d | 2019-11-15 09:10 | 2019-11-15 15:53 | 149 | 0d |
| 151 |  | 系统公告-查看系统公告详情 | 0.71d | 2019-11-15 15:53 | 2019-11-18 13:36 | 150 | 0d |
| 152 |  | 系统公告-删除系统公告 | 0.71d | 2019-11-18 13:36 | 2019-11-19 10:19 | 151 | 0d |
| 153 |  | 系统升级 | 0.71d | 2019-11-19 10:19 | 2019-11-20 08:02 | 152 | 0d |
| 154 | 1.3 | **前台功能** | 12.22d | 2019-11-08 15:15 | 2019-11-27 08:02 |  | 0d |
| 155 | 1.3.1 | **前台首页** | 11.51d | 2019-11-08 15:15 | 2019-11-26 10:19 |  | 0.16d |
| 156 | 1.3.1.1 | **课堂实验** | 1.11d | 2019-11-08 15:15 | 2019-11-11 16:08 |  | 7.78d |
| 157 |  | 课堂实验-课堂实验列表 | 0.56d | 2019-11-08 15:15 | 2019-11-11 10:42 | 146 | 7.78d |
| 158 |  | 课堂实验-操作课堂实验 | 0.56d | 2019-11-11 10:42 | 2019-11-11 16:08 | 157 | 7.78d |
| 159 | 1.3.1.2 | **实验报告** | 2.22d | 2019-11-11 16:08 | 2019-11-14 08:55 |  | 7.78d |
| 160 |  | 实验报告-实验报告列表 | 0.56d | 2019-11-11 16:08 | 2019-11-12 11:35 | 158 | 7.78d |
| 161 |  | 实验报告-查看实验报告详情 | 0.56d | 2019-11-12 11:35 | 2019-11-13 08:02 | 160 | 7.78d |
| 162 |  | 实验报告-批改实验报告 | 0.56d | 2019-11-13 08:02 | 2019-11-13 13:28 | 161 | 7.78d |
| 163 |  | 实验报告-删除实验报告 | 0.56d | 2019-11-13 13:28 | 2019-11-14 08:55 | 162 | 7.78d |
| 164 | 1.3.1.3 | **实验日志** | 1.43d | 2019-11-20 08:02 | 2019-11-21 11:28 |  | 0d |
| 165 |  | 实验日志-实验日志列表 | 0.71d | 2019-11-20 08:02 | 2019-11-20 14:45 | 153 | 0d |
| 166 |  | 实验日志-查看详细命令 | 0.71d | 2019-11-20 14:45 | 2019-11-21 11:28 | 165 | 0d |
| 167 | 1.3.1.4 | **用户信息** | 1.43d | 2019-11-21 11:28 | 2019-11-22 15:54 |  | 0d |
| 168 |  | 信息修改-编辑用户信息 | 0.71d | 2019-11-21 11:28 | 2019-11-22 09:11 | 166 | 0d |
| 169 |  | 密码修改-修改密码 | 0.71d | 2019-11-22 09:11 | 2019-11-22 15:54 | 168 | 0d |
| 170 | 1.3.1.5 | **实验帮助** | 0.56d | 2019-11-14 08:55 | 2019-11-14 14:22 |  | 7.78d |
| 171 |  | 实验帮助-实验帮助列表 | 0.56d | 2019-11-14 08:55 | 2019-11-14 14:22 | 163 | 7.78d |
| 172 | 1.3.1.6 | **系统公告** | 1.43d | 2019-11-22 15:54 | 2019-11-26 10:19 |  | 0d |
| 173 |  | 系统公告-系统公告列表 | 0.71d | 2019-11-22 15:54 | 2019-11-25 13:36 | 169 | 0d |
| 174 |  | 系统公告-查看系统公告详情 | 0.71d | 2019-11-25 13:36 | 2019-11-26 10:19 | 173 | 0d |
| 175 | 1.3.2 | **登录注册** | 8.33d | 2019-11-14 14:22 | 2019-11-27 08:02 |  | 0d |
| 176 |  | 登录页面 | 0.56d | 2019-11-14 14:22 | 2019-11-15 09:48 | 171 | 7.78d |
| 177 |  | 注册页面 | 0.71d | 2019-11-26 10:19 | 2019-11-27 08:02 | 174 | 0d |
| 178 |  | 已知bug/需求修改 | 14.29d | 2019-11-27 08:02 | 2019-12-17 10:19 | 176, 177 | 0d |

## Version 2 (saved 2019-09-23)

Note of the change: 更新netcollege计划前端页面首页之后任务层级错误，计划日期不变

Last finish stays 2019-12-17.

Changed:

| ID | Task | Start | Finish | Duration | Total float | Other |
| --- | --- | --- | --- | --- | --- | --- |
| 155 | 前台首页 | 2019-11-08 15:15 → 2019-11-15 09:48 (+7d) | 2019-11-26 10:19 → 2019-11-15 15:17 (-11d) | 11.51d → 0.56d | 0.16d → 21.5d | resources none → 冯雷 [90%] |

## Version 3 (saved 2019-09-25)

Note of the change: 进度更新

Last finish stays 2019-12-17. Complete tasks 2 → 13.

Changed:

| ID | Task | Start | Finish | Duration | Complete | Total float | Other |
| --- | --- | --- | --- | --- | --- | --- | --- |
| 1 | **netcollege开发** |  |  |  | 5% → 13% |  |  |
| 2 | **开发准备/代码分析** |  | 2019-09-19 17:00 A |  | 85% → 100% | 0d → none |  |
| 5 | 导入前端框架依赖js/css/font/创建新界面layout/header/footer/menu |  | 2019-09-19 17:00 A |  | 50% → 100% | 0d → none |  |
| 6 | **后台功能** | 2019-09-20 08:00 A |  |  | 0% → 10% | 0d → 0.56d |  |
| 7 | 后台首页 | 2019-09-20 08:00 A | 2019-09-20 13:26 A |  | 0% → 100% | 7.78d → none |  |
| 8 | **设备管理** | 2019-09-20 08:00 A | 2019-10-08 10:40 → 2019-10-09 13:15 (+1d) | 8.33d → 9.53d | 0% → 42% | 0d → 6.58d |  |
| 9 | **实验设备管理** | 2019-09-20 13:26 A | 2019-09-25 10:40 → 2019-09-26 13:14 A (+1d) | 2.78d → 3.98d | 0% → 100% | 7.78d → none |  |
| 10 | 实验设备列表 | 2019-09-20 13:26 A | 2019-09-23 08:53 → 2019-09-23 10:47 A | 0.56d → 0.79d | 0% → 100% | 7.78d → none | resources 冯雷 [90%] → 王战永 [70%] |
| 11 | 新增实验设备 | 2019-09-23 08:53 → 2019-09-23 10:47 A | 2019-09-23 14:20 → 2019-09-24 09:08 A (+1d) | 0.56d → 0.79d | 0% → 100% | 7.78d → none | resources 冯雷 [90%] → 王战永 [70%] |
| 12 | 查看设备状态 | 2019-09-23 14:20 → 2019-09-24 09:08 A (+1d) | 2019-09-24 09:46 → 2019-09-24 16:29 A | 0.56d → 0.79d | 0% → 100% | 7.78d → none | resources 冯雷 [90%] → 王战永 [70%] |
| 13 | 编辑实验设备 | 2019-09-24 09:46 → 2019-09-24 16:29 A | 2019-09-24 15:13 → 2019-09-25 14:53 A (+1d) | 0.56d → 0.8d | 0% → 100% | 7.78d → none | resources 冯雷 [90%] → 王战永 [70%] |
| 14 | 删除实验设备 | 2019-09-24 15:13 → 2019-09-25 14:53 A (+1d) | 2019-09-25 10:40 → 2019-09-26 13:14 A (+1d) | 0.56d → 0.79d | 0% → 100% | 7.78d → none | resources 冯雷 [90%] → 王战永 [70%] |
| 15 | **设备类别设置** | 2019-09-20 08:00 A | 2019-09-24 15:51 A |  | 0% → 100% | 0d → none |  |
| 16 | 设备类别列表 | 2019-09-20 08:00 A | 2019-09-20 14:42 A |  | 0% → 100% | 0d → none |  |
| 17 | 新建设备类别 | 2019-09-20 14:42 A | 2019-09-23 11:25 A |  | 0% → 100% | 0d → none |  |
| 18 | 编辑设备类别 | 2019-09-23 11:25 A | 2019-09-24 09:08 A |  | 0% → 100% | 0d → none |  |
| 19 | 删除设备类别 | 2019-09-24 09:08 A | 2019-09-24 15:51 A |  | 0% → 100% | 0d → none |  |
| 20 | **设备型号管理** | 2019-09-25 10:40 → 2019-09-26 13:14 (+1d) | 2019-09-27 13:27 → 2019-09-29 15:01 (+2d) |  |  | 7.78d → 6.58d |  |
| 21 | 设备型号列表 | 2019-09-25 10:40 → 2019-09-26 13:14 (+1d) | 2019-09-25 16:06 → 2019-09-27 08:41 (+2d) |  |  | 7.78d → 6.58d |  |
| 22 | 新建设备型号 | 2019-09-25 16:06 → 2019-09-27 08:41 (+2d) | 2019-09-26 11:33 → 2019-09-27 14:08 (+1d) |  |  | 7.78d → 6.58d |  |
| 23 | 编辑设备型号 | 2019-09-26 11:33 → 2019-09-27 14:08 (+1d) | 2019-09-27 08:00 → 2019-09-29 09:34 (+2d) |  |  | 7.78d → 6.58d |  |
| 24 | 删除设备型号 | 2019-09-27 08:00 → 2019-09-29 09:34 (+2d) | 2019-09-27 13:27 → 2019-09-29 15:01 (+2d) |  |  | 7.78d → 6.58d |  |
| 32 | **虚拟化设备管理** | 2019-09-27 13:27 → 2019-09-29 15:01 (+2d) | 2019-10-08 10:40 → 2019-10-09 13:15 (+1d) |  |  | 7.78d → 6.58d |  |
| 33 | 虚拟化设备列表 | 2019-09-27 13:27 → 2019-09-29 15:01 (+2d) | 2019-09-29 08:53 → 2019-09-30 10:28 (+1d) |  |  | 7.78d → 6.58d |  |
| 34 | 新增虚拟化设备 | 2019-09-29 08:53 → 2019-09-30 10:28 (+1d) | 2019-09-29 14:20 → 2019-09-30 15:54 (+1d) |  |  | 7.78d → 6.58d |  |
| 35 | 查看虚拟系统-新增虚拟系统 | 2019-09-29 14:20 → 2019-09-30 15:54 (+1d) | 2019-09-30 09:47 → 2019-10-08 11:21 (+8d) |  |  | 7.78d → 6.58d |  |
| 36 | 编辑虚拟化设备 | 2019-09-30 09:47 → 2019-10-08 11:21 (+8d) | 2019-09-30 15:13 → 2019-10-08 16:48 (+8d) |  |  | 7.78d → 6.58d |  |
| 37 | 删除虚拟化设备 | 2019-09-30 15:13 → 2019-10-08 16:48 (+8d) | 2019-10-08 10:40 → 2019-10-09 13:15 (+1d) |  |  | 7.78d → 6.58d |  |
| 53 | **底层设备控制模块** | 2019-10-08 10:40 → 2019-10-09 13:15 (+1d) | 2019-10-11 08:54 → 2019-10-12 10:28 (+1d) |  |  | 7.78d → 6.58d |  |
| 54 | 底层设备控制模块列表 | 2019-10-08 10:40 → 2019-10-09 13:15 (+1d) | 2019-10-08 16:07 → 2019-10-10 08:41 (+2d) |  |  | 7.78d → 6.58d |  |
| 55 | 新增底层设备控制模块 | 2019-10-08 16:07 → 2019-10-10 08:41 (+2d) | 2019-10-09 11:33 → 2019-10-10 14:08 (+1d) |  |  | 7.78d → 6.58d |  |
| 56 | 查看使用情况 | 2019-10-09 11:33 → 2019-10-10 14:08 (+1d) | 2019-10-10 08:00 → 2019-10-11 09:35 (+1d) |  |  | 7.78d → 6.58d |  |
| 57 | 编辑底层设备控制模块 | 2019-10-10 08:00 → 2019-10-11 09:35 (+1d) | 2019-10-10 13:27 → 2019-10-11 15:01 (+1d) |  |  | 7.78d → 6.58d |  |
| 58 | 删除底层设备控制模块 | 2019-10-10 13:27 → 2019-10-11 15:01 (+1d) | 2019-10-11 08:54 → 2019-10-12 10:28 (+1d) |  |  | 7.78d → 6.58d |  |
| 59 | **网络拓扑管理模块** | 2019-10-11 08:54 → 2019-10-12 10:28 (+1d) | 2019-10-14 10:40 → 2019-10-15 13:15 (+1d) |  |  | 7.78d → 6.58d |  |
| 60 | 网络拓扑管理模块列表 | 2019-10-11 08:54 → 2019-10-12 10:28 (+1d) | 2019-10-11 14:20 → 2019-10-12 15:55 (+1d) |  |  | 7.78d → 6.58d |  |
| 61 | 新增络拓扑管理模块 | 2019-10-11 14:20 → 2019-10-12 15:55 (+1d) | 2019-10-12 09:47 → 2019-10-14 11:21 (+2d) |  |  | 7.78d → 6.58d |  |
| 62 | 编辑络拓扑管理模块 | 2019-10-12 09:47 → 2019-10-14 11:21 (+2d) | 2019-10-12 15:14 → 2019-10-14 16:48 (+2d) |  |  | 7.78d → 6.58d |  |
| 63 | 删除络拓扑管理模块 | 2019-10-12 15:14 → 2019-10-14 16:48 (+2d) | 2019-10-14 10:40 → 2019-10-15 13:15 (+1d) |  |  | 7.78d → 6.58d |  |
| 64 | **课程管理** | 2019-10-14 10:40 → 2019-10-15 13:15 (+1d) |  | 13.81d → 12.61d |  |  |  |
| 81 | **课程分类** | 2019-10-14 10:40 → 2019-10-15 13:15 (+1d) | 2019-10-14 16:07 → 2019-10-16 08:42 (+2d) |  |  | 7.78d → 6.58d |  |
| 82 | 课程分类管理-添加二级分类 | 2019-10-14 10:40 → 2019-10-15 13:15 (+1d) | 2019-10-14 16:07 → 2019-10-16 08:42 (+2d) |  |  | 7.78d → 6.58d |  |
| 83 | **课程调度** | 2019-10-14 16:07 → 2019-10-16 08:42 (+2d) | 2019-10-16 13:27 → 2019-10-17 15:02 (+1d) |  |  | 7.78d → 6.58d |  |
| 84 | 课程调度-课程调度列表 | 2019-10-14 16:07 → 2019-10-16 08:42 (+2d) | 2019-10-15 11:34 → 2019-10-16 14:08 (+1d) |  |  | 7.78d → 6.58d |  |
| 85 | 课程调度-加载课程 | 2019-10-15 11:34 → 2019-10-16 14:08 (+1d) | 2019-10-16 08:00 → 2019-10-17 09:35 (+1d) |  |  | 7.78d → 6.58d |  |
| 86 | 课程调度-添加实验组 | 2019-10-16 08:00 → 2019-10-17 09:35 (+1d) | 2019-10-16 13:27 → 2019-10-17 15:02 (+1d) |  |  | 7.78d → 6.58d |  |
| 87 | **拓扑管理** | 2019-10-16 13:27 → 2019-10-17 15:02 (+1d) | 2019-10-24 08:54 → 2019-10-25 10:29 (+1d) |  |  | 7.78d → 6.58d |  |
| 88 | **网络拓扑分类** | 2019-10-16 13:27 → 2019-10-17 15:02 (+1d) | 2019-10-18 15:14 → 2019-10-21 16:48 (+3d) |  |  | 7.78d → 6.58d |  |
| 89 | 网络拓扑分类列表 | 2019-10-16 13:27 → 2019-10-17 15:02 (+1d) | 2019-10-17 08:54 → 2019-10-18 10:28 (+1d) |  |  | 7.78d → 6.58d |  |
| 90 | 添加网络拓扑分类 | 2019-10-17 08:54 → 2019-10-18 10:28 (+1d) | 2019-10-17 14:21 → 2019-10-18 15:55 (+1d) |  |  | 7.78d → 6.58d |  |
| 91 | 编辑网络拓扑分类 | 2019-10-17 14:21 → 2019-10-18 15:55 (+1d) | 2019-10-18 09:47 → 2019-10-21 11:22 (+3d) |  |  | 7.78d → 6.58d |  |
| 92 | 删除网络拓扑分类 | 2019-10-18 09:47 → 2019-10-21 11:22 (+3d) | 2019-10-18 15:14 → 2019-10-21 16:48 (+3d) |  |  | 7.78d → 6.58d |  |
| 93 | **拓扑端口管理** | 2019-10-18 15:14 → 2019-10-21 16:48 (+3d) | 2019-10-22 11:34 → 2019-10-23 14:09 (+1d) |  |  | 7.78d → 6.58d |  |
| 94 | 拓扑端口列表 | 2019-10-18 15:14 → 2019-10-21 16:48 (+3d) | 2019-10-21 10:41 → 2019-10-22 13:15 (+1d) |  |  | 7.78d → 6.58d |  |
| 95 | 新增拓扑端口 | 2019-10-21 10:41 → 2019-10-22 13:15 (+1d) | 2019-10-21 16:07 → 2019-10-23 08:42 (+2d) |  |  | 7.78d → 6.58d |  |
| 96 | 删除拓扑端口 | 2019-10-21 16:07 → 2019-10-23 08:42 (+2d) | 2019-10-22 11:34 → 2019-10-23 14:09 (+1d) |  |  | 7.78d → 6.58d |  |
| 97 | **网络拓扑设计** | 2019-10-22 11:34 → 2019-10-23 14:09 (+1d) | 2019-10-24 08:54 → 2019-10-25 10:29 (+1d) |  |  | 7.78d → 6.58d |  |
| 98 | 添加网络拓扑 | 2019-10-22 11:34 → 2019-10-23 14:09 (+1d) | 2019-10-23 08:01 → 2019-10-24 09:35 (+1d) |  |  | 7.78d → 6.58d |  |
| 99 | 编辑网络拓扑 | 2019-10-23 08:01 → 2019-10-24 09:35 (+1d) | 2019-10-23 13:27 → 2019-10-24 15:02 (+1d) |  |  | 7.78d → 6.58d |  |
| 100 | 删除网络拓扑 | 2019-10-23 13:27 → 2019-10-24 15:02 (+1d) | 2019-10-24 08:54 → 2019-10-25 10:29 (+1d) |  |  | 7.78d → 6.58d |  |
| 101 | **用户管理** | 2019-10-24 08:54 → 2019-10-25 10:29 (+1d) |  | 12.46d → 11.27d |  |  |  |
| 102 | **组织管理** | 2019-10-24 08:54 → 2019-10-25 10:29 (+1d) | 2019-10-28 10:41 → 2019-10-29 13:15 (+1d) |  |  | 7.78d → 6.58d |  |
| 103 | 组织管理列表 | 2019-10-24 08:54 → 2019-10-25 10:29 (+1d) | 2019-10-24 14:21 → 2019-10-25 15:55 (+1d) |  |  | 7.78d → 6.58d |  |
| 104 | 新建组织 | 2019-10-24 14:21 → 2019-10-25 15:55 (+1d) | 2019-10-25 09:48 → 2019-10-28 11:22 (+3d) |  |  | 7.78d → 6.58d |  |
| 105 | 编辑组织 | 2019-10-25 09:48 → 2019-10-28 11:22 (+3d) | 2019-10-25 15:14 → 2019-10-28 16:49 (+3d) |  |  | 7.78d → 6.58d |  |
| 106 | 删除组织 | 2019-10-25 15:14 → 2019-10-28 16:49 (+3d) | 2019-10-28 10:41 → 2019-10-29 13:15 (+1d) |  |  | 7.78d → 6.58d |  |
| 107 | **审核用户** | 2019-10-28 10:41 → 2019-10-29 13:15 (+1d) | 2019-10-29 11:34 → 2019-10-30 14:09 (+1d) |  |  | 7.78d → 6.58d |  |
| 108 | 审核用户列表 | 2019-10-28 10:41 → 2019-10-29 13:15 (+1d) | 2019-10-28 16:08 → 2019-10-30 08:42 (+2d) |  |  | 7.78d → 6.58d |  |
| 109 | 删除审核用户 | 2019-10-28 16:08 → 2019-10-30 08:42 (+2d) | 2019-10-29 11:34 → 2019-10-30 14:09 (+1d) |  |  | 7.78d → 6.58d |  |
| 120 | **查询统计** | 2019-10-29 11:34 → 2019-10-30 14:09 (+1d) | 2019-11-08 09:48 → 2019-11-11 11:23 (+3d) |  |  | 7.78d → 6.58d |  |

| ID | Task | Start | Finish | Duration | Total float |
| --- | --- | --- | --- | --- | --- |
| 121 | **用户考勤** | 2019-10-29 11:34 → 2019-10-30 14:09 (+1d) | 2019-10-31 08:54 → 2019-11-01 10:29 (+1d) |  | 7.78d → 6.58d |
| 122 | 用户考勤列表 | 2019-10-29 11:34 → 2019-10-30 14:09 (+1d) | 2019-10-30 08:01 → 2019-10-31 09:36 (+1d) |  | 7.78d → 6.58d |
| 123 | 编辑用户考勤 | 2019-10-30 08:01 → 2019-10-31 09:36 (+1d) | 2019-10-30 13:28 → 2019-10-31 15:02 (+1d) |  | 7.78d → 6.58d |
| 124 | 删除用户考勤 | 2019-10-30 13:28 → 2019-10-31 15:02 (+1d) | 2019-10-31 08:54 → 2019-11-01 10:29 (+1d) |  | 7.78d → 6.58d |
| 125 | **在线用户** | 2019-10-31 08:54 → 2019-11-01 10:29 (+1d) | 2019-11-01 09:48 → 2019-11-04 11:22 (+3d) |  | 7.78d → 6.58d |
| 126 | 在线用户列表 | 2019-10-31 08:54 → 2019-11-01 10:29 (+1d) | 2019-10-31 14:21 → 2019-11-01 15:56 (+1d) |  | 7.78d → 6.58d |
| 127 | 查看在线用户详情 | 2019-10-31 14:21 → 2019-11-01 15:56 (+1d) | 2019-11-01 09:48 → 2019-11-04 11:22 (+3d) |  | 7.78d → 6.58d |
| 128 | **命令日志** | 2019-11-01 09:48 → 2019-11-04 11:22 (+3d) | 2019-11-04 16:08 → 2019-11-06 08:42 (+2d) |  | 7.78d → 6.58d |
| 129 | 命令日志列表 | 2019-11-01 09:48 → 2019-11-04 11:22 (+3d) | 2019-11-01 15:15 → 2019-11-04 16:49 (+3d) |  | 7.78d → 6.58d |
| 130 | 查看详细命令 | 2019-11-01 15:15 → 2019-11-04 16:49 (+3d) | 2019-11-04 10:41 → 2019-11-05 13:16 (+1d) |  | 7.78d → 6.58d |
| 131 | 删除命令日志 | 2019-11-04 10:41 → 2019-11-05 13:16 (+1d) | 2019-11-04 16:08 → 2019-11-06 08:42 (+2d) |  | 7.78d → 6.58d |
| 132 | **操作日志** | 2019-11-04 16:08 → 2019-11-06 08:42 (+2d) | 2019-11-06 08:01 → 2019-11-07 09:36 (+1d) |  | 7.78d → 6.58d |
| 133 | 操作日志列表 | 2019-11-04 16:08 → 2019-11-06 08:42 (+2d) | 2019-11-05 11:35 → 2019-11-06 14:09 (+1d) |  | 7.78d → 6.58d |
| 134 | 查看操作日志 | 2019-11-05 11:35 → 2019-11-06 14:09 (+1d) | 2019-11-06 08:01 → 2019-11-07 09:36 (+1d) |  | 7.78d → 6.58d |
| 135 | **恢复日志** | 2019-11-06 08:01 → 2019-11-07 09:36 (+1d) | 2019-11-07 08:55 → 2019-11-08 10:29 (+1d) |  | 7.78d → 6.58d |
| 136 | 恢复日志列表 | 2019-11-06 08:01 → 2019-11-07 09:36 (+1d) | 2019-11-06 13:28 → 2019-11-07 15:03 (+1d) |  | 7.78d → 6.58d |
| 137 | 查看恢复日志备注 | 2019-11-06 13:28 → 2019-11-07 15:03 (+1d) | 2019-11-07 08:55 → 2019-11-08 10:29 (+1d) |  | 7.78d → 6.58d |
| 138 | **设备使用情况** | 2019-11-07 08:55 → 2019-11-08 10:29 (+1d) | 2019-11-08 09:48 → 2019-11-11 11:23 (+3d) |  | 7.78d → 6.58d |
| 139 | 备使用情况列表 | 2019-11-07 08:55 → 2019-11-08 10:29 (+1d) | 2019-11-07 14:21 → 2019-11-08 15:56 (+1d) |  | 7.78d → 6.58d |
| 140 | 删除设备使用情况 | 2019-11-07 14:21 → 2019-11-08 15:56 (+1d) | 2019-11-08 09:48 → 2019-11-11 11:23 (+3d) |  | 7.78d → 6.58d |
| 145 | **设备恢复** | 2019-11-08 09:48 → 2019-11-11 11:23 (+3d) | 2019-11-08 15:15 → 2019-11-11 16:49 (+3d) |  | 7.78d → 6.58d |
| 146 | 设备恢复-设备恢复列表 | 2019-11-08 09:48 → 2019-11-11 11:23 (+3d) | 2019-11-08 15:15 → 2019-11-11 16:49 (+3d) |  | 7.78d → 6.58d |
| 154 | **前台功能** | 2019-11-08 15:15 → 2019-11-11 16:49 (+3d) |  | 12.22d → 11.03d | 7.22d → 6.03d |
| 156 | **课堂实验** | 2019-11-08 15:15 → 2019-11-11 16:49 (+3d) | 2019-11-11 16:08 → 2019-11-13 08:43 (+2d) |  | 7.78d → 6.58d |
| 157 | 课堂实验-课堂实验列表 | 2019-11-08 15:15 → 2019-11-11 16:49 (+3d) | 2019-11-11 10:42 → 2019-11-12 13:16 (+1d) |  | 7.78d → 6.58d |
| 158 | 课堂实验-操作课堂实验 | 2019-11-11 10:42 → 2019-11-12 13:16 (+1d) | 2019-11-11 16:08 → 2019-11-13 08:43 (+2d) |  | 7.78d → 6.58d |
| 159 | **实验报告** | 2019-11-11 16:08 → 2019-11-13 08:43 (+2d) | 2019-11-14 08:55 → 2019-11-15 10:30 (+1d) |  | 7.78d → 6.58d |
| 160 | 实验报告-实验报告列表 | 2019-11-11 16:08 → 2019-11-13 08:43 (+2d) | 2019-11-12 11:35 → 2019-11-13 14:09 (+1d) |  | 7.78d → 6.58d |
| 161 | 实验报告-查看实验报告详情 | 2019-11-12 11:35 → 2019-11-13 14:09 (+1d) | 2019-11-13 08:02 → 2019-11-14 09:36 (+1d) |  | 7.78d → 6.58d |
| 162 | 实验报告-批改实验报告 | 2019-11-13 08:02 → 2019-11-14 09:36 (+1d) | 2019-11-13 13:28 → 2019-11-14 15:03 (+1d) |  | 7.78d → 6.58d |
| 163 | 实验报告-删除实验报告 | 2019-11-13 13:28 → 2019-11-14 15:03 (+1d) | 2019-11-14 08:55 → 2019-11-15 10:30 (+1d) |  | 7.78d → 6.58d |
| 170 | **实验帮助** | 2019-11-14 08:55 → 2019-11-15 10:30 (+1d) | 2019-11-14 14:22 → 2019-11-15 15:56 (+1d) |  | 7.78d → 6.58d |
| 171 | 实验帮助-实验帮助列表 | 2019-11-14 08:55 → 2019-11-15 10:30 (+1d) | 2019-11-14 14:22 → 2019-11-15 15:56 (+1d) |  | 7.78d → 6.58d |
| 175 | **登录注册** | 2019-11-14 14:22 → 2019-11-15 15:56 (+1d) |  | 8.33d → 7.14d |  |
| 176 | 登录页面 | 2019-11-14 14:22 → 2019-11-15 15:56 (+1d) | 2019-11-15 09:48 → 2019-11-18 11:23 (+3d) |  | 7.78d → 6.58d |

## Version 4 (saved 2019-10-11)

Note of the change: 更新项目进度

Last finish stays 2019-12-17. Complete tasks 13 → 47.

Changed:

| ID | Task | Start | Finish | Complete | Total float |
| --- | --- | --- | --- | --- | --- |
| 1 | **netcollege开发** |  |  | 13% → 34% |  |
| 6 | **后台功能** |  |  | 10% → 40% |  |
| 8 | **设备管理** |  | 2019-10-09 13:15 A | 42% → 100% | 6.58d → none |
| 20 | **设备型号管理** | 2019-09-26 13:14 A | 2019-09-29 15:01 A | 0% → 100% | 6.58d → none |
| 21 | 设备型号列表 | 2019-09-26 13:14 A | 2019-09-27 08:41 A | 0% → 100% | 6.58d → none |
| 22 | 新建设备型号 | 2019-09-27 08:41 A | 2019-09-27 14:08 A | 0% → 100% | 6.58d → none |
| 23 | 编辑设备型号 | 2019-09-27 14:08 A | 2019-09-29 09:34 A | 0% → 100% | 6.58d → none |
| 24 | 删除设备型号 | 2019-09-29 09:34 A | 2019-09-29 15:01 A | 0% → 100% | 6.58d → none |
| 25 | **设备命令过滤** | 2019-09-24 15:51 A | 2019-09-30 09:09 A | 0% → 100% | 0d → none |
| 26 | 设备命令列表 | 2019-09-24 15:51 A | 2019-09-25 13:34 A | 0% → 100% | 0d → none |
| 27 | 添加过滤指令-新增禁止指令例外参数 | 2019-09-25 13:34 A | 2019-09-26 10:17 A | 0% → 100% | 0d → none |
| 28 | 查看禁止指令例外参数-编辑例外参数 | 2019-09-26 10:17 A | 2019-09-27 08:00 A | 0% → 100% | 0d → none |
| 29 | 查看禁止指令例外参数-删除列外参数 | 2019-09-27 08:00 A | 2019-09-27 14:43 A | 0% → 100% | 0d → none |
| 30 | 编辑命令-新增禁止指令例外参数 | 2019-09-27 14:43 A | 2019-09-29 11:26 A | 0% → 100% | 0d → none |
| 31 | 删除命令 | 2019-09-29 11:26 A | 2019-09-30 09:09 A | 0% → 100% | 0d → none |
| 32 | **虚拟化设备管理** | 2019-09-29 15:01 A | 2019-10-09 13:15 A | 0% → 100% | 6.58d → none |
| 33 | 虚拟化设备列表 | 2019-09-29 15:01 A | 2019-09-30 10:28 A | 0% → 100% | 6.58d → none |
| 34 | 新增虚拟化设备 | 2019-09-30 10:28 A | 2019-09-30 15:54 A | 0% → 100% | 6.58d → none |
| 35 | 查看虚拟系统-新增虚拟系统 | 2019-09-30 15:54 A | 2019-10-08 11:21 A | 0% → 100% | 6.58d → none |
| 36 | 编辑虚拟化设备 | 2019-10-08 11:21 A | 2019-10-08 16:48 A | 0% → 100% | 6.58d → none |
| 37 | 删除虚拟化设备 | 2019-10-08 16:48 A | 2019-10-09 13:15 A | 0% → 100% | 6.58d → none |
| 38 | **实验室管理** | 2019-09-30 09:09 A |  | 0% → 88% | 0d → 4.68d |
| 39 | **实验室管理** | 2019-09-30 09:09 A | 2019-10-17 11:26 A | 0% → 100% | 0d → none |
| 40 | 实验室列表 | 2019-09-30 09:09 A | 2019-09-30 15:51 A | 0% → 100% | 0d → none |
| 41 | 新建实验室 | 2019-09-30 15:51 A | 2019-10-08 13:34 A | 0% → 100% | 0d → none |
| 42 | 查看实验组-新建实验组 | 2019-10-08 13:34 A | 2019-10-09 10:17 A | 0% → 100% | 0d → none |
| 43 | 查看实验组-克隆实验组 | 2019-10-09 10:17 A | 2019-10-10 08:00 A | 0% → 100% | 0d → none |
| 44 | 查看实验组-查看拥有设备-查看设备状态 | 2019-10-10 08:00 A | 2019-10-10 14:43 A | 0% → 100% | 0d → none |
| 45 | 查看实验组-查看拥有设备-编辑设备信息 | 2019-10-10 14:43 A | 2019-10-11 11:26 A | 0% → 100% | 0d → none |
| 46 | 查看实验组-查看拥有设备-删除设备 | 2019-10-11 11:26 A | 2019-10-12 09:09 A | 0% → 100% | 0d → none |
| 47 | 查看实验组-查看拥有设备-安排实验用户-实验用户列表 | 2019-10-12 09:09 A | 2019-10-12 15:52 A | 0% → 100% | 0d → none |
| 48 | 查看实验组-查看拥有设备-安排实验用户-安排实验用户 | 2019-10-12 15:52 A | 2019-10-14 13:35 A | 0% → 100% | 0d → none |
| 49 | 查看实验组-编辑实验组 | 2019-10-14 13:35 A | 2019-10-15 10:18 A | 0% → 100% | 0d → none |
| 50 | 查看实验组-删除实验组 | 2019-10-15 10:18 A | 2019-10-16 08:00 A | 0% → 100% | 0d → none |
| 51 | 编辑实验室 | 2019-10-16 08:00 A | 2019-10-16 14:43 A | 0% → 100% | 0d → none |
| 52 | 删除实验室 | 2019-10-16 14:43 A | 2019-10-17 11:26 A | 0% → 100% | 0d → none |
| 53 | **底层设备控制模块** | 2019-10-09 13:15 A | 2019-10-12 10:28 A | 0% → 100% | 6.58d → none |
| 54 | 底层设备控制模块列表 | 2019-10-09 13:15 A | 2019-10-10 08:41 A | 0% → 100% | 6.58d → none |
| 55 | 新增底层设备控制模块 | 2019-10-10 08:41 A | 2019-10-10 14:08 A | 0% → 100% | 6.58d → none |
| 56 | 查看使用情况 | 2019-10-10 14:08 A | 2019-10-11 09:35 A | 0% → 100% | 6.58d → none |
| 57 | 编辑底层设备控制模块 | 2019-10-11 09:35 A | 2019-10-11 15:01 A | 0% → 100% | 6.58d → none |
| 58 | 删除底层设备控制模块 | 2019-10-11 15:01 A | 2019-10-12 10:28 A | 0% → 100% | 6.58d → none |
| 59 | **网络拓扑管理模块** | 2019-10-12 10:28 A |  | 0% → 25% |  |
| 60 | 网络拓扑管理模块列表 | 2019-10-12 10:28 A | 2019-10-12 15:55 A | 0% → 100% | 6.58d → none |

## Version 5 (saved 2019-10-17)

Note of the change: 合并开发与测试计划

Last finish 2019-12-17 → 2020-01-15 (+29d). Complete tasks 47 → 50.

Added:

| ID | Task | Duration | Start | Finish | Predecessors | Constraint | Resources |
| --- | --- | --- | --- | --- | --- | --- | --- |
| 179 | **Netcollege测试阶段** | 68.66d? | 2019-09-17 08:00 | 2019-12-25 14:14 |  |  |  |
| 180 | **性能测试** | 7d | 2019-09-23 08:00 | 2019-09-30 17:00 |  |  |  |
| 181 | 测试调试 | 7d | 2019-09-23 08:00 | 2019-09-30 17:00 |  |  | 刘江珊 [60%] |
| 182 | 测试执行 | 5d | 2019-10-08 08:00 | 2019-10-12 17:00 | 181 |  | 刘江珊 [60%] |
| 183 | **测试用例编写** | 25d? | 2019-09-23 08:00 | 2019-10-30 17:00 |  |  |  |
| 184 | **设备管理** | 7d | 2019-09-23 08:00 | 2019-09-30 17:00 |  |  |  |
| 185 | **实验设备管理** | 2d? | 2019-09-23 08:00 | 2019-09-24 17:00 |  |  |  |
| 186 | 实验设备列表 | 0.25d? | 2019-09-23 08:00 | 2019-09-23 10:00 |  | start no earlier than 2019-09-23 08:00 | 张幽雅 |
| 187 | 新增实验设备 | 0.25d? | 2019-09-23 10:00 | 2019-09-23 12:00 | 186 |  | 张幽雅 |
| 188 | 查看设备状态 | 0.25d? | 2019-09-23 13:00 | 2019-09-23 15:00 | 187 |  | 张幽雅 |
| 189 | 编辑实验设备 | 0.25d? | 2019-09-23 15:00 | 2019-09-23 17:00 | 188 |  | 张幽雅 |
| 190 | 删除实验设备 | 0.25d? | 2019-09-24 08:00 | 2019-09-24 10:00 | 189 |  | 张幽雅 |
| 191 | **设备类别设置** | 1d? | 2019-09-25 08:00 | 2019-09-25 17:00 |  |  |  |
| 192 | 设备类别列表 | 0.25d | 2019-09-25 08:00 | 2019-09-25 10:00 |  | start no earlier than 2019-09-25 08:00 | 张幽雅 |
| 193 | 新建设备类别 | 0.25d | 2019-09-25 10:00 | 2019-09-25 12:00 | 192 |  | 张幽雅 |
| 194 | 编辑设备类别 | 0.25d | 2019-09-25 13:00 | 2019-09-25 15:00 | 193 |  | 张幽雅 |
| 195 | 删除设备类别 | 0.25d | 2019-09-25 15:00 | 2019-09-25 17:00 | 194 |  | 张幽雅 |
| 196 | **设备型号管理** | 1d? | 2019-09-26 08:00 | 2019-09-26 17:00 |  |  |  |
| 197 | 设备型号列表 | 0.25d? | 2019-09-26 08:00 | 2019-09-26 10:00 |  | start no earlier than 2019-09-26 08:00 | 张幽雅 |
| 198 | 新建设备型号 | 0.25d? | 2019-09-26 10:00 | 2019-09-26 12:00 | 197 |  | 张幽雅 |
| 199 | 编辑设备型号 | 0.25d? | 2019-09-26 13:00 | 2019-09-26 15:00 | 198 |  | 张幽雅 |
| 200 | 删除设备型号 | 0.25d? | 2019-09-26 15:00 | 2019-09-26 17:00 | 199 |  | 张幽雅 |
| 201 | **设备命令过滤** | 1d? | 2019-09-27 08:00 | 2019-09-27 17:00 |  |  |  |
| 202 | 设备命令列表 | 0.1d? | 2019-09-27 08:00 | 2019-09-27 08:48 |  | start no earlier than 2019-09-27 08:00 | 张幽雅 |
| 203 | 添加过滤指令-新增禁止指令例外参数 | 0.25d? | 2019-09-27 08:48 | 2019-09-27 10:48 | 202 |  | 张幽雅 |
| 204 | 查看禁止指令例外参数-编辑例外参数 | 0.15d? | 2019-09-27 10:48 | 2019-09-27 12:00 | 203 |  | 张幽雅 |
| 205 | 查看禁止指令例外参数-删除列外参数 | 0.25d? | 2019-09-27 13:00 | 2019-09-27 15:00 | 204 |  | 张幽雅 |
| 206 | 编辑命令-新增禁止指令例外参数 | 0.15d? | 2019-09-27 15:00 | 2019-09-27 16:12 | 205 |  | 张幽雅 |
| 207 | 删除命令 | 0.1d? | 2019-09-27 16:12 | 2019-09-27 17:00 | 206 |  | 张幽雅 |
| 208 | **虚拟化设备管理** | 2d? | 2019-09-29 08:00 | 2019-09-30 17:00 |  |  |  |
| 209 | 虚拟化设备列表 | 0.25d? | 2019-09-29 08:00 | 2019-09-29 10:00 |  | start no earlier than 2019-09-29 08:00 | 张幽雅 |
| 210 | 新增虚拟化设备 | 0.7d? | 2019-09-29 10:00 | 2019-09-29 16:36 | 209 |  | 张幽雅 |
| 211 | 查看虚拟系统-新增虚拟系统 | 0.25d? | 2019-09-29 16:36 | 2019-09-30 09:36 | 210 |  | 张幽雅 |
| 212 | 编辑虚拟化设备 | 0.15d? | 2019-09-30 09:36 | 2019-09-30 10:48 | 211 |  | 张幽雅 |
| 213 | 删除虚拟化设备 | 0.15d? | 2019-09-30 10:48 | 2019-09-30 12:00 | 212 |  | 张幽雅 |
| 214 | **实验室管理** | 6d | 2019-10-14 08:00 | 2019-10-21 17:00 |  |  |  |
| 215 | **实验室管理** | 3d? | 2019-10-14 08:00 | 2019-10-16 17:00 |  |  |  |
| 216 | 实验室列表 | 0.25d? | 2019-10-14 08:00 | 2019-10-14 10:00 |  | start no earlier than 2019-10-14 08:00 | 张幽雅 |
| 217 | 新建实验室 | 0.5d? | 2019-10-14 10:00 | 2019-10-14 15:00 | 216 |  | 张幽雅 |
| 218 | 查看实验组-新建实验组 | 0.25d? | 2019-10-14 15:00 | 2019-10-14 17:00 | 217 |  | 张幽雅 |
| 219 | 查看实验组-克隆实验组 | 0.25d? | 2019-10-15 08:00 | 2019-10-15 10:00 | 218 |  | 张幽雅 |
| 220 | 查看实验组-查看拥有设备-查看设备状态 | 0.15d? | 2019-10-15 10:00 | 2019-10-15 11:12 | 219 |  | 张幽雅 |
| 221 | 查看实验组-查看拥有设备-编辑设备信息 | 0.15d? | 2019-10-15 11:12 | 2019-10-15 13:24 | 220 |  | 张幽雅 |
| 222 | 查看实验组-查看拥有设备-删除设备 | 0.15d? | 2019-10-15 13:24 | 2019-10-15 14:36 | 221 |  | 张幽雅 |
| 223 | 查看实验组-查看拥有设备-安排实验用户-实验用户列表 | 0.15d? | 2019-10-15 14:36 | 2019-10-15 15:48 | 222 |  | 张幽雅 |
| 224 | 查看实验组-查看拥有设备-安排实验用户-安排实验用户 | 0.15d? | 2019-10-15 15:48 | 2019-10-15 17:00 | 223 |  | 张幽雅 |
| 225 | 查看实验组-编辑实验组 | 0.15d? | 2019-10-16 08:00 | 2019-10-16 09:12 | 224 |  | 张幽雅 |
| 226 | 查看实验组-删除实验组 | 0.15d? | 2019-10-16 09:12 | 2019-10-16 10:24 | 225 |  | 张幽雅 |
| 227 | 编辑实验室 | 0.15d? | 2019-10-16 10:24 | 2019-10-16 11:36 | 226 |  | 张幽雅 |
| 228 | 删除实验室 | 0.15d? | 2019-10-16 11:36 | 2019-10-16 13:48 | 227 |  | 张幽雅 |
| 229 | **底层设备控制模块** | 2d | 2019-10-16 08:00 | 2019-10-17 17:00 | 228 |  |  |
| 230 | 底层设备控制模块列表 | 0.25d? | 2019-10-16 13:48 | 2019-10-16 15:48 | 228 | start no earlier than 2019-10-11 08:00 | 张幽雅 |
| 231 | 新增底层设备控制模块 | 0.5d? | 2019-10-16 15:48 | 2019-10-17 10:48 | 230 |  | 张幽雅 |
| 232 | 查看使用情况 | 0.25d? | 2019-10-17 10:48 | 2019-10-17 13:48 | 231 |  | 张幽雅 |
| 233 | 编辑底层设备控制模块 | 0.25d? | 2019-10-17 13:48 | 2019-10-17 15:48 | 232 |  | 张幽雅 |
| 234 | 删除底层设备控制模块 | 0.25d? | 2019-10-17 15:48 | 2019-10-18 08:48 | 233 |  | 张幽雅 |
| 235 | **网络拓扑管理模块** | 2d? | 2019-10-18 08:00 | 2019-10-21 17:00 | 234 |  |  |
| 236 | 网络拓扑管理模块列表 | 0.25d? | 2019-10-18 08:48 | 2019-10-18 10:48 | 234 | start no earlier than 2019-10-14 08:00 | 张幽雅 |
| 237 | 新增络拓扑管理模块 | 0.5d? | 2019-10-18 10:48 | 2019-10-18 15:48 | 236 |  | 张幽雅 |
| 238 | 编辑络拓扑管理模块 | 0.25d? | 2019-10-18 15:48 | 2019-10-21 08:48 | 237 |  | 张幽雅 |
| 239 | 删除络拓扑管理模块 | 0.25d? | 2019-10-21 08:48 | 2019-10-21 10:48 | 238 |  | 张幽雅 |
| 240 | **课程管理** | 5d? | 2019-10-25 08:00 | 2019-10-31 17:00 |  |  |  |
| 241 | **课程管理** | 3d? | 2019-10-25 08:00 | 2019-10-29 17:00 |  |  |  |
| 242 | 课程列表 | 0.25d? | 2019-10-25 08:00 | 2019-10-25 10:00 | 369 | start no earlier than 2019-10-16 08:00 | 张幽雅 |
| 243 | 新建课程 | 0.5d? | 2019-10-25 10:00 | 2019-10-25 15:00 | 242 |  | 张幽雅 |
| 244 | 课件管理-课件列表 | 0.15d? | 2019-10-25 15:00 | 2019-10-25 16:12 | 243 |  | 张幽雅 |
| 245 | 课件管理-导入课件 | 0.15d? | 2019-10-25 16:12 | 2019-10-28 08:24 | 244 |  | 张幽雅 |
| 246 | 课件管理-编辑课件 | 0.15d? | 2019-10-28 08:24 | 2019-10-28 09:36 | 245 |  | 张幽雅 |
| 247 | 课件管理-删除课件 | 0.15d? | 2019-10-28 09:36 | 2019-10-28 10:48 | 246 |  | 张幽雅 |
| 248 | 课堂作业-课程作业列表 | 0.15d? | 2019-10-28 10:48 | 2019-10-28 12:00 | 247 |  | 张幽雅 |
| 249 | 课堂作业-作业统计 | 0.15d? | 2019-10-28 13:00 | 2019-10-28 14:12 | 248 |  | 张幽雅 |
| 250 | 课堂作业-布置作业 | 0.15d? | 2019-10-28 14:12 | 2019-10-28 15:24 | 249 |  | 张幽雅 |
| 251 | 编辑课程-课程设置 | 0.15d? | 2019-10-28 15:24 | 2019-10-28 16:36 | 250 |  | 张幽雅 |
| 252 | 编辑课程-课程信息-编辑课程信息 | 0.15d? | 2019-10-28 16:36 | 2019-10-29 08:48 | 251 |  | 张幽雅 |
| 253 | 编辑课程-实验步骤-编辑实验步骤 | 0.15d? | 2019-10-29 08:48 | 2019-10-29 10:00 | 252 |  | 张幽雅 |
| 254 | 编辑课程-教学大纲-编辑教学大纲 | 0.15d? | 2019-10-29 10:00 | 2019-10-29 11:12 | 253 |  | 张幽雅 |
| 255 | 编辑课程-网络拓扑 | 0.15d? | 2019-10-29 11:12 | 2019-10-29 13:24 | 254 |  | 张幽雅 |
| 256 | 删除课程 | 0.15d? | 2019-10-29 13:24 | 2019-10-29 14:36 | 255 | finish no earlier than 2019-10-18 17:00 | 张幽雅 |
| 257 | **课程分类** | 1d? | 2019-10-29 08:00 | 2019-10-29 17:00 | 256 |  |  |
| 258 | 课程分类管理-添加二级分类 | 0.5d? | 2019-10-29 14:36 | 2019-10-30 09:36 | 256 | start no earlier than 2019-10-21 08:00 | 张幽雅 |
| 259 | **课程调度** | 1.5d? | 2019-10-30 08:00 | 2019-10-31 12:00 | 258 |  |  |
| 260 | 课程调度-课程调度列表 | 0.5d? | 2019-10-30 09:36 | 2019-10-30 14:36 | 258 |  | 张幽雅 |
| 261 | 课程调度-加载课程 | 0.5d? | 2019-10-30 14:36 | 2019-10-31 09:36 | 260 |  | 张幽雅 |
| 262 | 课程调度-添加实验组 | 0.5d? | 2019-10-31 09:36 | 2019-10-31 14:36 | 261 |  | 张幽雅 |
| 263 | **拓扑管理** | 4d? | 2019-10-10 08:00 | 2019-10-14 17:00 |  |  |  |
| 264 | **网络拓扑分类** | 2d? | 2019-10-10 08:00 | 2019-10-11 17:00 |  |  |  |
| 265 | 网络拓扑分类列表 | 0.25d | 2019-10-10 08:00 | 2019-10-10 10:00 |  | start no earlier than 2019-10-10 08:00 | 付培胜 [50%] |
| 266 | 添加网络拓扑分类 | 0.5d? | 2019-10-10 10:00 | 2019-10-10 15:00 | 265 |  | 付培胜 [50%] |
| 267 | 编辑网络拓扑分类 | 0.25d? | 2019-10-10 15:00 | 2019-10-10 17:00 | 266 |  | 付培胜 [50%] |
| 268 | 删除网络拓扑分类 | 0.25d? | 2019-10-11 08:00 | 2019-10-11 10:00 | 267 |  | 付培胜 [50%] |
| 269 | **拓扑端口管理** | 2d? | 2019-10-11 08:00 | 2019-10-12 17:00 |  |  |  |
| 270 | 拓扑端口列表 | 0.25d? | 2019-10-11 10:00 | 2019-10-11 12:00 | 268 |  | 付培胜 [50%] |
| 271 | 新增拓扑端口 | 0.5d? | 2019-10-11 13:00 | 2019-10-11 17:00 | 270 |  | 付培胜 [50%] |
| 272 | 删除拓扑端口 | 0.25d? | 2019-10-12 08:00 | 2019-10-12 10:00 | 271 |  | 付培胜 [50%] |
| 273 | **网络拓扑设计** | 2d? | 2019-10-12 08:00 | 2019-10-14 17:00 |  |  |  |
| 274 | 添加网络拓扑 | 1d? | 2019-10-12 10:00 | 2019-10-14 10:00 | 272 |  | 付培胜 [50%] |
| 275 | 编辑网络拓扑 | 0.25d? | 2019-10-14 10:00 | 2019-10-14 12:00 | 274 |  | 付培胜 [50%] |
| 276 | 删除网络拓扑 | 0.5d? | 2019-10-14 13:00 | 2019-10-14 17:00 | 275 |  | 付培胜 [50%] |
| 277 | **用户管理** | 4d | 2019-10-15 08:00 | 2019-10-18 17:00 |  |  |  |
| 278 | **组织管理** | 1d? | 2019-10-15 08:00 | 2019-10-15 17:00 |  |  |  |
| 279 | 组织管理列表 | 0.25d? | 2019-10-15 08:00 | 2019-10-15 10:00 | 276 |  | 付培胜 [50%] |
| 280 | 新建组织 | 0.25d? | 2019-10-15 10:00 | 2019-10-15 12:00 | 279 |  | 付培胜 [50%] |
| 281 | 编辑组织 | 0.25d? | 2019-10-15 13:00 | 2019-10-15 15:00 | 280 |  | 付培胜 [50%] |
| 282 | 删除组织 | 0.25d? | 2019-10-15 15:00 | 2019-10-15 17:00 | 281 |  | 付培胜 [50%] |
| 283 | **审核用户** | 1d? | 2019-10-16 08:00 | 2019-10-16 17:00 |  |  |  |
| 284 | 审核用户列表 | 0.25d? | 2019-10-16 08:00 | 2019-10-16 10:00 | 282 |  | 付培胜 [50%] |
| 285 | 删除审核用户 | 0.25d? | 2019-10-16 10:00 | 2019-10-16 12:00 | 284 |  | 付培胜 [50%] |
| 286 | **用户管理** | 3d? | 2019-10-16 08:00 | 2019-10-18 17:00 |  |  |  |
| 287 | 用户列表 | 0.25d? | 2019-10-16 13:00 | 2019-10-16 15:00 | 285 |  | 付培胜 [50%] |
| 288 | 新增用户 | 0.5d? | 2019-10-16 15:00 | 2019-10-17 10:00 | 287 |  | 付培胜 [50%] |
| 289 | 密文导入用户 | 0.15d? | 2019-10-17 10:00 | 2019-10-17 11:12 | 288 |  | 付培胜 [50%] |
| 290 | 明文导入用户 | 0.15d? | 2019-10-17 11:12 | 2019-10-17 13:24 | 289 |  | 付培胜 [50%] |
| 291 | 导出用户 | 0.15d? | 2019-10-17 13:24 | 2019-10-17 14:36 | 290 |  | 付培胜 [50%] |
| 292 | 启用/锁定用户 | 0.15d? | 2019-10-17 14:36 | 2019-10-17 15:48 | 291 |  | 付培胜 [50%] |
| 293 | 查看用户信息 | 0.15d? | 2019-10-17 15:48 | 2019-10-17 17:00 | 292 |  | 付培胜 [50%] |
| 294 | 编辑用户 | 0.15d? | 2019-10-18 08:00 | 2019-10-18 09:12 | 293 |  | 付培胜 [50%] |
| 295 | 删除用户 | 0.15d? | 2019-10-18 09:12 | 2019-10-18 10:24 | 294 |  | 付培胜 [50%] |
| 296 | **查询统计** | 3d? | 2019-10-18 08:00 | 2019-10-22 17:00 |  |  |  |
| 297 | **用户考勤** | 1d? | 2019-10-18 08:00 | 2019-10-18 17:00 |  |  |  |
| 298 | 用户考勤列表 | 0.15d? | 2019-10-18 10:24 | 2019-10-18 11:36 | 295 |  | 付培胜 [50%] |
| 299 | 编辑用户考勤 | 0.25d? | 2019-10-18 11:36 | 2019-10-18 14:36 | 298 |  | 付培胜 [50%] |
| 300 | 删除用户考勤 | 0.25d? | 2019-10-18 14:36 | 2019-10-18 16:36 | 299 |  | 付培胜 [50%] |
| 301 | **在线用户** | 2d? | 2019-10-18 08:00 | 2019-10-21 17:00 |  |  |  |
| 302 | 在线用户列表 | 0.15d? | 2019-10-18 16:36 | 2019-10-21 08:48 | 300 |  | 付培胜 [50%] |
| 303 | 查看在线用户详情 | 0.15d? | 2019-10-21 08:48 | 2019-10-21 10:00 | 302 |  | 付培胜 [50%] |
| 304 | **命令日志** | 1d? | 2019-10-21 08:00 | 2019-10-21 17:00 |  |  |  |
| 305 | 命令日志列表 | 0.15d? | 2019-10-21 10:00 | 2019-10-21 11:12 | 303 |  | 付培胜 [50%] |
| 306 | 查看详细命令 | 0.15d? | 2019-10-21 11:12 | 2019-10-21 13:24 | 305 |  | 付培胜 [50%] |
| 307 | 删除命令日志 | 0.15d? | 2019-10-21 13:24 | 2019-10-21 14:36 | 306 |  | 付培胜 [50%] |
| 308 | **操作日志** | 1d? | 2019-10-21 08:00 | 2019-10-21 17:00 |  |  |  |
| 309 | 操作日志列表 | 0.15d? | 2019-10-21 14:36 | 2019-10-21 15:48 | 307 |  | 付培胜 [50%] |
| 310 | 查看操作日志 | 0.15d? | 2019-10-21 15:48 | 2019-10-21 17:00 | 309 |  | 付培胜 [50%] |
| 311 | **恢复日志** | 1d? | 2019-10-22 08:00 | 2019-10-22 17:00 |  |  |  |
| 312 | 恢复日志列表 | 0.25d? | 2019-10-22 08:00 | 2019-10-22 10:00 | 310 |  | 付培胜 [50%] |
| 313 | 查看恢复日志备注 | 0.25d? | 2019-10-22 10:00 | 2019-10-22 12:00 | 312 |  | 付培胜 [50%] |
| 314 | **设备使用情况** | 1d? | 2019-10-22 08:00 | 2019-10-22 17:00 |  |  |  |
| 315 | 备使用情况列表 | 0.15d? | 2019-10-22 13:00 | 2019-10-22 14:12 | 313 |  | 付培胜 [50%] |
| 316 | 删除设备使用情况 | 0.15d? | 2019-10-22 14:12 | 2019-10-22 15:24 | 315 |  | 付培胜 [50%] |
| 317 | **实验帮助** | 2d? | 2019-10-22 08:00 | 2019-10-23 17:00 |  |  |  |
| 318 | 实验帮助-实验帮助列表 | 0.25d? | 2019-10-22 15:24 | 2019-10-23 08:24 | 316 |  | 付培胜 [50%] |
| 319 | 实验帮助-上传实验帮助 | 0.25d? | 2019-10-23 08:24 | 2019-10-23 10:24 | 318 |  | 付培胜 [50%] |
| 320 | 实验帮助-删除实验帮助 | 0.25d? | 2019-10-23 10:24 | 2019-10-23 13:24 | 319 |  | 付培胜 [50%] |
| 321 | **设备恢复** | 2d? | 2019-10-23 08:00 | 2019-10-24 17:00 |  |  |  |
| 322 | 设备恢复-设备恢复列表 | 0.5d? | 2019-10-23 13:24 | 2019-10-24 08:24 | 320 |  | 付培胜 [50%] |
| 323 | **系统管理** | 1d? | 2019-10-24 08:00 | 2019-10-24 17:00 |  |  |  |
| 324 | 系统设置-编辑系统设置 | 0.25d? | 2019-10-24 08:24 | 2019-10-24 10:24 | 322 |  | 付培胜 [50%] |
| 325 | 系统公告-系统公告列表 | 0.1d? | 2019-10-24 10:24 | 2019-10-24 11:12 | 324 |  | 付培胜 [50%] |
| 326 | 系统公告-发布系统公告 | 0.15d? | 2019-10-24 11:12 | 2019-10-24 13:24 | 325 |  | 付培胜 [50%] |
| 327 | 系统公告-查看系统公告详情 | 0.1d? | 2019-10-24 13:24 | 2019-10-24 14:12 | 326 |  | 付培胜 [50%] |
| 328 | 系统公告-删除系统公告 | 0.1d? | 2019-10-24 14:12 | 2019-10-24 15:00 | 327 |  | 付培胜 [50%] |
| 329 | 系统升级 | 0.1d? | 2019-10-24 15:00 | 2019-10-24 15:48 | 328 |  | 付培胜 [50%] |
| 330 | **前台功能** | 7.78d? | 2019-09-23 08:00 | 2019-10-08 15:15 |  |  |  |
| 331 | **前台首页** | 5d? | 2019-10-24 08:00 | 2019-10-30 17:00 |  |  |  |
| 332 | **课堂实验** | 2d? | 2019-10-24 08:00 | 2019-10-25 17:00 |  |  |  |
| 333 | 课堂实验-课堂实验列表 | 0.5d? | 2019-10-24 15:48 | 2019-10-25 10:48 | 329 |  | 付培胜 [50%] |
| 334 | 课堂实验-操作课堂实验 | 0.5d? | 2019-10-25 10:48 | 2019-10-25 15:48 | 333 |  | 付培胜 [50%] |
| 335 | **实验报告** | 2d? | 2019-10-25 08:00 | 2019-10-28 17:00 |  |  |  |
| 336 | 实验报告-实验报告列表 | 0.25d? | 2019-10-25 15:48 | 2019-10-28 08:48 | 334 |  | 付培胜 [50%] |
| 337 | 实验报告-查看实验报告详情 | 0.25d? | 2019-10-28 08:48 | 2019-10-28 10:48 | 336 |  | 付培胜 [50%] |
| 338 | 实验报告-批改实验报告 | 0.25d? | 2019-10-28 10:48 | 2019-10-28 13:48 | 337 |  | 付培胜 [50%] |
| 339 | 实验报告-删除实验报告 | 0.25d? | 2019-10-28 13:48 | 2019-10-28 15:48 | 338 |  | 付培胜 [50%] |
| 340 | **实验日志** | 2d? | 2019-10-28 08:00 | 2019-10-29 17:00 |  |  |  |
| 341 | 实验日志-实验日志列表 | 0.25d? | 2019-10-28 15:48 | 2019-10-29 08:48 | 339 |  | 付培胜 [50%] |
| 342 | 实验日志-查看详细命令 | 0.25d? | 2019-10-29 08:48 | 2019-10-29 10:48 | 341 |  | 付培胜 [50%] |
| 343 | **用户信息** | 1d? | 2019-10-29 08:00 | 2019-10-29 17:00 |  |  |  |
| 344 | 信息修改-编辑用户信息 | 0.1d? | 2019-10-29 10:48 | 2019-10-29 11:36 | 342 |  | 付培胜 [50%] |
| 345 | 密码修改-修改密码 | 0.1d? | 2019-10-29 11:36 | 2019-10-29 13:24 | 344 |  | 付培胜 [50%] |
| 346 | **实验帮助** | 1d? | 2019-10-29 08:00 | 2019-10-29 17:00 |  |  |  |
| 347 | 实验帮助-实验帮助列表 | 0.1d? | 2019-10-29 13:24 | 2019-10-29 14:12 | 345 |  | 付培胜 [50%] |
| 348 | **系统公告** | 1d? | 2019-10-29 08:00 | 2019-10-29 17:00 |  |  |  |
| 349 | 系统公告-系统公告列表 | 0.1d? | 2019-10-29 14:12 | 2019-10-29 15:00 | 347 |  | 付培胜 [50%] |
| 350 | 系统公告-查看系统公告详情 | 0.1d? | 2019-10-29 15:00 | 2019-10-29 15:48 | 349 |  | 付培胜 [50%] |
| 351 | **登录注册** | 1d? | 2019-10-29 08:00 | 2019-10-29 17:00 |  |  |  |
| 352 | 登录页面 | 0.1d? | 2019-10-29 15:48 | 2019-10-29 16:36 | 350 |  | 付培胜 [50%] |
| 353 | 注册页面 | 0.25d? | 2019-10-29 16:36 | 2019-10-30 09:36 | 352 |  | 付培胜 [50%] |
| 354 | **测试用例评审** | 5.7d | 2019-09-17 08:00 | 2019-09-24 14:36 |  |  |  |
| 355 | 第一阶段测试用例评审 | 1d | 2019-09-30 13:00 | 2019-10-08 12:00 | 213 |  | fenglei; wangzy; guominf |
| 356 | 第二阶段测试用例评审 | 1d | 2019-10-21 10:48 | 2019-10-22 10:48 | 239 |  | fenglei; wangzy; guominf |
| 357 | 第三阶段测试用例评审 | 1d | 2019-10-31 14:36 | 2019-11-01 14:36 | 262 |  | fenglei; wangzy; guominf |
| 358 | **测试执行** | 68.66d | 2019-09-17 08:00 | 2019-12-25 14:14 |  |  |  |
| 359 | **后台功能测试** | 54.37d | 2019-09-17 08:00 | 2019-12-05 10:57 |  |  |  |
| 360 | **设备管理** | 4d | 2019-10-08 10:40 | 2019-10-12 10:40 |  |  |  |
| 361 | 实验设备管理 | 2d | 2019-10-08 10:40 | 2019-10-10 10:40 |  |  | 张幽雅 |
| 362 | 设备类别设置 | 0.5d | 2019-10-10 10:40 | 2019-10-10 15:40 | 361 |  | 张幽雅 |
| 363 | 设备型号管理 | 0.5d | 2019-10-10 15:40 | 2019-10-11 10:40 | 362 |  | 张幽雅 |
| 364 | 设备命令过滤 | 0.5d | 2019-10-11 10:40 | 2019-10-11 15:40 | 363 |  | 张幽雅 |
| 365 | 虚拟化设备管理 | 0.5d | 2019-10-11 15:40 | 2019-10-12 10:40 | 364 |  | 张幽雅 |
| 366 | **实验室管理** | 3.65d | 2019-10-21 10:48 | 2019-10-24 17:00 |  |  |  |
| 367 | 实验室管理 | 2d | 2019-10-21 10:48 | 2019-10-23 10:48 |  |  | 张幽雅 |
| 368 | 底层设备控制模块 | 0.5d | 2019-10-24 08:00 | 2019-10-24 12:00 | 367 |  | 张幽雅 |
| 369 | 网络拓扑管理模块 | 0.5d | 2019-10-24 13:00 | 2019-10-24 17:00 | 368 |  | 张幽雅 |
| 370 | **课程管理** | 3d | 2019-09-17 08:00 | 2019-09-19 17:00 |  |  |  |
| 371 | 课程管理 | 1.5d | 2019-09-17 08:00 | 2019-09-18 12:00 |  |  | 张幽雅 |
| 372 | 课程分类 | 0.5d | 2019-09-18 13:00 | 2019-09-18 17:00 | 371 |  | 张幽雅 |
| 373 | 课程调度 | 1d | 2019-09-19 08:00 | 2019-09-19 17:00 | 372 |  | 张幽雅 |
| 374 | **拓扑管理** | 3d | 2019-09-20 08:00 | 2019-09-24 17:00 |  |  |  |
| 375 | 网络拓扑分类 | 1d | 2019-09-20 08:00 | 2019-09-20 17:00 | 373 |  | 张幽雅 |
| 376 | 拓扑端口管理 | 1d | 2019-09-23 08:00 | 2019-09-23 17:00 | 375 |  | 张幽雅 |
| 377 | 网络拓扑设计 | 1d | 2019-09-24 08:00 | 2019-09-24 17:00 | 376 |  | 张幽雅 |
| 378 | **用户管理** | 2.5d | 2019-09-25 08:00 | 2019-09-27 12:00 |  |  |  |
| 379 | 组织管理 | 0.5d | 2019-09-25 08:00 | 2019-09-25 12:00 | 377 |  | 张幽雅 |
| 380 | 审核用户 | 0.5d | 2019-09-25 13:00 | 2019-09-25 17:00 | 379 |  | 张幽雅 |
| 381 | 用户管理 | 1.5d | 2019-09-26 08:00 | 2019-09-27 12:00 | 380 |  | 张幽雅 |
| 382 | 后台bug回归测试 | 3d | 2019-11-18 08:43 | 2019-11-21 08:43 | 378 |  | 张幽雅 |
| 383 | **查询统计** | 3.5d | 2019-09-27 13:00 | 2019-10-08 17:00 |  |  |  |
| 384 | 用户考勤 | 0.5d | 2019-09-27 13:00 | 2019-09-27 17:00 | 381 |  | 张幽雅 |
| 385 | 在线用户 | 1d | 2019-09-29 08:00 | 2019-09-29 17:00 | 384 |  | 张幽雅 |
| 386 | 命令日志 | 0.5d | 2019-09-30 08:00 | 2019-09-30 12:00 | 385 |  | 张幽雅 |
| 387 | 操作日志 | 0.5d | 2019-09-30 13:00 | 2019-09-30 17:00 | 386 |  | 张幽雅 |
| 388 | 恢复日志 | 0.5d | 2019-10-08 08:00 | 2019-10-08 12:00 | 387 |  | 张幽雅 |
| 389 | 设备使用情况 | 0.5d | 2019-10-08 13:00 | 2019-10-08 17:00 | 388 |  | 张幽雅 |
| 390 | 实验帮助 | 1d | 2019-10-09 08:00 | 2019-10-09 17:00 | 389 |  | 张幽雅 |
| 391 | 设备恢复 | 1d | 2019-10-10 08:00 | 2019-10-10 17:00 | 390 |  | 张幽雅 |
| 392 | 系统管理 | 0.5d | 2019-10-11 08:00 | 2019-10-11 12:00 | 391 |  | 张幽雅 |
| 393 | 后台bug回归测试 | 2d | 2019-12-03 10:57 | 2019-12-05 10:57 | 392 |  | 张幽雅 |
| 394 | **前台功能测试** | 7d | 2019-10-28 08:00 | 2019-11-05 17:00 |  |  |  |
| 395 | **前台首页** | 6.5d | 2019-10-28 08:00 | 2019-11-05 12:00 |  |  |  |
| 396 | 课堂实验 | 3d | 2019-10-28 08:00 | 2019-10-30 17:00 | 332 |  | 陈珊珊 |
| 397 | 实验报告 | 1d | 2019-10-31 08:00 | 2019-10-31 17:00 | 335, 396 |  | 陈珊珊 |
| 398 | 实验日志 | 1d | 2019-11-01 08:00 | 2019-11-01 17:00 | 340, 397 |  | 陈珊珊 |
| 399 | 用户信息 | 0.5d | 2019-11-04 08:00 | 2019-11-04 12:00 | 343, 398 |  | 陈珊珊 |
| 400 | 实验帮助 | 0.5d | 2019-11-04 13:00 | 2019-11-04 17:00 | 346, 399 |  | 陈珊珊 |
| 401 | 系统公告 | 0.5d | 2019-11-05 08:00 | 2019-11-05 12:00 | 348, 400 |  | 陈珊珊 |
| 402 | 登录注册 | 0.5d | 2019-11-05 13:00 | 2019-11-05 17:00 | 351, 401 |  | 陈珊珊 |
| 403 | 前台bug回归 | 3d | 2019-11-06 08:00 | 2019-11-08 17:00 | 402 |  | 陈珊珊 |
| 404 | 前后台集成测试 | 10d | 2019-12-05 10:57 | 2019-12-19 10:57 | 393 |  | 张幽雅; 陈珊珊 |
| 405 | 前后台确认测试 | 3d | 2019-12-20 14:14 | 2019-12-25 14:14 | 404 |  | 张幽雅; 陈珊珊 |
| 406 | **硬件5台设备改制** | 68d | 2019-10-14 08:00 | 2020-01-15 17:00 |  |  |  |
| 407 | 设备型号确认 | 1d | 2019-10-14 08:00 | 2019-10-14 17:00 | 182 |  |  |
| 408 | 源头产品到货 | 1d | 2019-12-25 08:00 | 2019-12-25 17:00 |  |  |  |
| 409 | **产品化工作** | 25d | 2019-10-15 08:00 | 2019-11-18 17:00 |  |  |  |
| 410 | 安排产品化设计 | 4d | 2019-10-15 08:00 | 2019-10-18 17:00 | 407 |  |  |
| 411 | 产品化打样 | 10d | 2019-10-21 08:00 | 2019-11-01 17:00 | 410 |  |  |
| 412 | 产品化确认 | 4d | 2019-11-04 08:00 | 2019-11-07 17:00 | 411 |  |  |
| 413 | 产品化备料 | 7d | 2019-11-08 08:00 | 2019-11-18 17:00 | 412 |  |  |
| 414 | MTO产测脚本 | 6d | 2019-12-25 14:14 | 2020-01-02 14:14 | 405 |  |  |
| 415 | 安排改制 | 8d | 2020-01-03 08:00 | 2020-01-14 17:00 | 414 |  |  |
| 416 | 交货 | 1d | 2020-01-15 08:00 | 2020-01-15 17:00 | 415 |  |  |

Changed:

| ID | Task | Start | Finish | Complete | Total float |
| --- | --- | --- | --- | --- | --- |
| 1 | **netcollege开发** |  |  | 34% → 36% | 0d → 21.71d |
| 6 | **后台功能** |  |  | 40% → 42% | 0.56d → 22.26d |
| 38 | **实验室管理** |  | 2019-10-17 11:26 A | 88% → 100% | 4.68d → none |
| 59 | **网络拓扑管理模块** |  | 2019-10-15 13:15 A | 25% → 100% | 6.58d → none |
| 61 | 新增络拓扑管理模块 | 2019-10-12 15:55 A | 2019-10-14 11:21 A | 0% → 100% | 6.58d → none |
| 62 | 编辑络拓扑管理模块 | 2019-10-14 11:21 A | 2019-10-14 16:48 A | 0% → 100% | 6.58d → none |
| 63 | 删除络拓扑管理模块 | 2019-10-14 16:48 A | 2019-10-15 13:15 A | 0% → 100% | 6.58d → none |
